# Sales Force Automation System Development

Schedule from MS Project XML, 2026-04-06 to 2027-07-21, status date 2026-08-26, costs in $, A marks actual dates.
In-house web application development
Kitagawa Industrial Co., Ltd.

## Calendars

- Standard: Mon-Fri 08:00-12:00, 13:00-17:00; Sat-Sun off. Exceptions (off unless hours are given): 2026-04-29 (Showa Day), 2026-05-04 (Greenery Day), 2026-05-05 (Children Day), 2026-05-06 (Substitute Holiday), 2026-07-20 (Marine Day), 2026-08-11 (Mountain Day), 2026-08-13 to 2026-08-14 (Summer Company Holiday), 2026-09-21 (Respect for the Aged Day), 2026-09-23 (Autumnal Equinox Day), 2026-10-12 (Sports Day), 2026-11-03 (Culture Day), 2026-11-23 (Labor Thanksgiving Day), 2026-12-29 to 2027-01-03 (Year End and New Year Holiday), 2027-01-11 (Coming of Age Day), 2027-02-11 (National Foundation Day), 2027-02-23 (Emperor Birthday), 2027-03-22 (Substitute Holiday), 2027-04-29 (Showa Day), 2027-05-03 (Constitution Day), 2027-05-04 (Greenery Day), 2027-05-05 (Children Day), 2027-07-19 (Marine Day).

## Resources

| Resource | Group | Rate |
| --- | --- | --- |
| Kubo Tetsuya | Project Management | 130 |
| Hara Aya | Project Management | 85 |
| Miyata Ken | Business Analysis | 110 |
| Sakai Rina | Business Analysis | 105 |
| Ueda Shinji | Architecture | 140 |
| Ogawa Daichi | Development | 125 |
| Nishimura Kaito | Development | 100 |
| Hayashi Miu | Development | 100 |
| Kondo Sora | Development | 95 |
| Maeda Jun | Development | 95 |
| Yasuda Rei | Development | 90 |
| Kawano Sara | UI Design | 95 |
| Morita Kenta | Quality Assurance | 90 |
| Tanabe Yuka | Quality Assurance | 85 |
| Iwasaki Go | Infrastructure | 120 |
| Shimizu Aoi | Data Engineering | 115 |
| Tsuji Masaru | Security | 150 |
| Noda Emi | Training | 80 |
| Sales Department Key Users | Business | 70 |
| Cloud Infrastructure Cost | External Cost |  |
| Software License | External Cost |  |

## Schedule

| ID | WBS | Task | Type | Duration | Start | Finish | Predecessors | Complete | Baseline start | Baseline finish | Baseline duration | Deadline | Resources | Work | Actual work | Cost | Baseline cost | Actual cost | Team | Deliverable |
| --- | --- | --- | --- | --- | --- | --- | --- | --- | --- | --- | --- | --- | --- | --- | --- | --- | --- | --- | --- | --- |
| 1 | 1 | **Project Setup** |  | 11d | 2026-04-06 A | 2026-04-20 A |  | 100% | 2026-04-06 | 2026-04-20 | 11d |  |  | 248h | 248h | 281.2 | 281.2 | 281.2 |  |  |
| 2 | 1.1 | Project Charter and Scope Definition |  | 5d | 2026-04-06 A | 2026-04-10 A |  | 100% | 2026-04-06 | 2026-04-10 | 5d |  | Kubo Tetsuya; Hara Aya [50%] | 60h | 60h | 69 | 69 | 69 | Project Management | Project Charter |
| 3 | 1.2 | Team Mobilization and Onboarding |  | 4d | 2026-04-08 A | 2026-04-13 A | 2SS+2d | 100% | 2026-04-08 | 2026-04-13 | 4d |  | Kubo Tetsuya [50%]; Hara Aya | 48h | 48h | 48 | 48 | 48 | Project Management |  |
| 4 | 1.3 | WBS and Schedule Baseline |  | 5d | 2026-04-13 A | 2026-04-17 A | 2 | 100% | 2026-04-13 | 2026-04-17 | 5d |  | Kubo Tetsuya; Hara Aya [50%] | 60h | 60h | 69 | 69 | 69 | Project Management |  |
| 5 | 1.4 | Development Standards Definition |  | 4d | 2026-04-14 A | 2026-04-17 A | 3 | 100% | 2026-04-14 | 2026-04-17 | 4d |  | Ueda Shinji [50%]; Ogawa Daichi [50%] | 32h | 32h | 42.4 | 42.4 | 42.4 | Architecture |  |
| 6 | 1.5 | Project Kickoff Meeting |  | 1d | 2026-04-20 A | 2026-04-20 A | 4, 5 | 100% | 2026-04-20 | 2026-04-20 | 1d |  | Kubo Tetsuya; Hara Aya; Miyata Ken; Ueda Shinji; Ogawa Daichi; Sales Department Key Users | 48h | 48h | 52.8 | 52.8 | 52.8 | Project Management |  |
| 7 | 1.6 | Project Start Approved | milestone | 0d | 2026-04-20 A | 2026-04-20 A | 6 | 100% | 2026-04-20 | 2026-04-20 | 0d |  |  |  |  |  |  |  | Project Management |  |
| 8 | 2 | **Requirements Definition** |  | 43d | 2026-04-21 A | 2026-06-24 A |  | 100% | 2026-04-21 | 2026-06-22 | 41d |  |  | 856h | 856h | 941.04 | 904.72 | 941.04 |  |  |
| 9 | 2.1 | As-Is Sales Process Analysis |  | 10d | 2026-04-21 A | 2026-05-08 A | 7 | 100% | 2026-04-21 | 2026-05-08 | 10d |  | Miyata Ken; Sakai Rina [50%] | 120h | 120h | 130 | 130 | 130 | Business Analysis |  |
| 10 | 2.2 | Interview: Direct Sales Division |  | 4d | 2026-04-24 A | 2026-04-30 A | 9SS+3d | 100% | 2026-04-24 | 2026-04-30 | 4d |  | Miyata Ken [60%]; Sales Department Key Users [50%] | 35.2h | 35.2h | 32.32 | 32.32 | 32.32 | Business Analysis |  |
| 11 | 2.3 | Interview: Dealer Sales Division |  | 4d | 2026-05-01 A | 2026-05-11 A | 10 | 100% | 2026-05-01 | 2026-05-11 | 4d |  | Sakai Rina [60%]; Sales Department Key Users [50%] | 35.2h | 35.2h | 31.36 | 31.36 | 31.36 | Business Analysis |  |
| 12 | 2.4 | Interview: Sales Administration |  | 3d | 2026-05-12 A | 2026-05-14 A | 11 | 100% | 2026-05-12 | 2026-05-14 | 3d |  | Sakai Rina [60%]; Sales Department Key Users [50%] | 26.4h | 26.4h | 23.52 | 23.52 | 23.52 | Business Analysis |  |
| 13 | 2.5 | To-Be Process Design |  | 10d | 2026-05-15 A | 2026-05-28 A | 12, 9 | 100% | 2026-05-15 | 2026-05-28 | 10d |  | Miyata Ken; Sakai Rina; Kubo Tetsuya [20%] | 176h | 176h | 192.8 | 192.8 | 192.8 | Business Analysis |  |
| 14 | 2.6 | Use Case and Functional Requirements |  | 12d | 2026-05-29 A | 2026-06-15 A | 13 | 100% | 2026-05-29 | 2026-06-15 | 12d |  | Miyata Ken; Sakai Rina [80%]; Ogawa Daichi [30%] | 201.6h | 201.6h | 222.24 | 222.24 | 222.24 | Business Analysis |  |
| 15 | 2.7 | Non-functional Requirements |  | 6d | 2026-05-29 A | 2026-06-05 A | 13 | 100% | 2026-05-29 | 2026-06-05 | 6d |  | Ueda Shinji [80%]; Iwasaki Go [50%]; Tsuji Masaru [40%] | 81.6h | 81.6h | 111.36 | 111.36 | 111.36 | Architecture |  |
| 16 | 2.8 | Data Requirements and Migration Scope |  | 6d | 2026-05-29 A | 2026-06-05 A | 13 | 100% | 2026-05-29 | 2026-06-05 | 6d |  | Shimizu Aoi; Sakai Rina [30%] | 62.4h | 62.4h | 70.32 | 70.32 | 70.32 | Data Engineering |  |
| 17 | 2.9 | Requirements Review and Approval |  | 7d | 2026-06-16 A | 2026-06-24 A | 14, 15, 16 | 100% | 2026-06-16 | 2026-06-22 | 5d |  | Kubo Tetsuya [80%]; Miyata Ken [80%]; Sales Department Key Users [50%] | 117.6h | 117.6h | 127.12 | 90.8 | 127.12 | Business Analysis |  |
| 18 | 2.10 | Requirements Frozen | milestone | 0d | 2026-06-24 A | 2026-06-24 A | 17 | 100% | 2026-06-22 | 2026-06-22 | 0d | 2026-06-22 |  |  |  |  |  |  | Business Analysis |  |
| 19 | 3 | **Architecture and External Design** |  | 22d | 2026-06-25 A | 2026-07-27 A |  | 100% | 2026-06-23 | 2026-07-23 | 22d |  |  | 684.8h | 684.8h | 816.32 | 816.32 | 816.32 |  |  |
| 20 | 3.1 | System Architecture Design |  | 10d | 2026-06-25 A | 2026-07-08 A | 18 | 100% | 2026-06-23 | 2026-07-06 | 10d |  | Ueda Shinji; Ogawa Daichi [40%] | 112h | 112h | 152 | 152 | 152 | Architecture |  |
| 21 | 3.2 | Screen Transition Design |  | 6d | 2026-06-25 A | 2026-07-02 A | 18 | 100% | 2026-06-23 | 2026-06-30 | 6d |  | Kawano Sara; Miyata Ken [30%] | 62.4h | 62.4h | 61.44 | 61.44 | 61.44 | Architecture |  |
| 22 | 3.3 | Screen Layout Design |  | 12d | 2026-07-03 A | 2026-07-21 A | 21 | 100% | 2026-07-01 | 2026-07-16 | 12d |  | Kawano Sara; Sakai Rina [30%] | 124.8h | 124.8h | 121.44 | 121.44 | 121.44 | Architecture |  |
| 23 | 3.4 | API Specification Design |  | 8d | 2026-07-09 A | 2026-07-21 A | 20 | 100% | 2026-07-07 | 2026-07-16 | 8d |  | Ueda Shinji [80%]; Ogawa Daichi [60%] | 89.6h | 89.6h | 119.68 | 119.68 | 119.68 | Architecture |  |
| 24 | 3.5 | Logical Data Model Design |  | 8d | 2026-06-30 A | 2026-07-09 A | 20SS+3d | 100% | 2026-06-26 | 2026-07-07 | 8d |  | Shimizu Aoi; Ueda Shinji [30%] | 83.2h | 83.2h | 100.48 | 100.48 | 100.48 | Data Engineering |  |
| 25 | 3.6 | Physical Database Design |  | 6d | 2026-07-10 A | 2026-07-17 A | 24 | 100% | 2026-07-08 | 2026-07-15 | 6d |  | Shimizu Aoi | 48h | 48h | 55.2 | 55.2 | 55.2 | Data Engineering |  |
| 26 | 3.7 | Security and Access Control Design |  | 6d | 2026-07-09 A | 2026-07-16 A | 20 | 100% | 2026-07-07 | 2026-07-14 | 6d |  | Tsuji Masaru [40%]; Ueda Shinji [40%] | 38.4h | 38.4h | 55.68 | 55.68 | 55.68 | Architecture |  |
| 27 | 3.8 | Infrastructure Design |  | 7d | 2026-07-09 A | 2026-07-17 A | 20 | 100% | 2026-07-07 | 2026-07-15 | 7d |  | Iwasaki Go | 56h | 56h | 67.2 | 67.2 | 67.2 | Infrastructure |  |
| 28 | 3.9 | External Design Review |  | 4d | 2026-07-22 A | 2026-07-27 A | 22, 23, 25, 26, 27 | 100% | 2026-07-17 | 2026-07-23 | 4d |  | Kubo Tetsuya [50%]; Ueda Shinji [80%]; Miyata Ken [50%]; Sales Department Key Users [40%] | 70.4h | 70.4h | 83.2 | 83.2 | 83.2 | Architecture |  |
| 29 | 3.10 | External Design Approved | milestone | 0d | 2026-07-27 A | 2026-07-27 A | 28 | 100% | 2026-07-23 | 2026-07-23 | 0d | 2026-07-23 |  |  |  |  |  |  | Architecture |  |

Notes:
- 17: Approval was delayed by one week because the quotation approval flow was revised during the review.

| ID | WBS | Task | Type | Duration | Start | Finish | Predecessors | Complete | Remaining | Baseline start | Baseline finish | Baseline duration | Total slack | Free slack | Resources | Work | Actual work | Cost | Baseline cost | Actual cost | Team | Deliverable |
| --- | --- | --- | --- | --- | --- | --- | --- | --- | --- | --- | --- | --- | --- | --- | --- | --- | --- | --- | --- | --- | --- | --- |
| 30 | 4 | **Environment and CI/CD** |  | 29d | 2026-07-21 A | 2026-09-02 |  | 83% | 4.93d | 2026-07-16 | 2026-08-31 | 29d | -2d | 0d |  | 211.2h | 184.32h | 604.4 | 604.4 | 572.14 |  |  |
| 31 | 4.1 | Development Environment Build |  | 6d | 2026-07-21 A | 2026-07-28 A | 27 | 100% |  | 2026-07-16 | 2026-07-24 | 6d |  |  | Iwasaki Go; Cloud Infrastructure Cost | 48h | 48h | 147.6 | 147.6 | 147.6 | Infrastructure |  |
| 32 | 4.2 | CI/CD Pipeline Setup |  | 6d | 2026-07-29 A | 2026-08-05 A | 31 | 100% |  | 2026-07-27 | 2026-08-03 | 6d |  |  | Iwasaki Go [60%]; Ogawa Daichi [40%] | 48h | 48h | 58.56 | 58.56 | 58.56 | Infrastructure |  |
| 33 | 4.3 | Staging Environment Build |  | 5d | 2026-08-06 A | 2026-08-17 A | 32 | 100% |  | 2026-08-04 | 2026-08-10 | 5d |  |  | Iwasaki Go [80%] | 32h | 32h | 38.4 | 38.4 | 38.4 | Infrastructure |  |
| 34 | 4.4 | Production Environment Build |  | 8d | 2026-08-18 A | 2026-08-27 | 33 | 88% | 0.96d | 2026-08-12 | 2026-08-25 | 8d | 212d | 0d | Iwasaki Go; Software License | 64h | 56.32h | 336.8 | 336.8 | 327.58 | Infrastructure |  |
| 35 | 4.5 | Monitoring and Log Collection Setup |  | 4d | 2026-08-28 | 2026-09-02 | 34 |  |  | 2026-08-26 | 2026-08-31 | 4d | 212d | 0d | Iwasaki Go [60%] | 19.2h |  | 23.04 | 23.04 |  | Infrastructure |  |
| 36 | 4.6 | Environments Ready | milestone | 0d | 2026-09-02 | 2026-09-02 | 35 |  |  | 2026-08-31 | 2026-08-31 | 0d | 212d |  |  |  |  |  |  |  | Infrastructure |  |
| 37 | 5 | **Iterative Development** |  | 142d | 2026-07-29 A | 2027-03-04 |  | 11% | 126.38d | 2026-07-27 | 2027-03-02 | 142d | -2d | 0d |  | 2515.2h | 312.13h | 2,494.32 | 2,367.48 | 320.58 |  |  |
| 38 | 5.1 | **Iteration 1 - Account and Contact Management** |  | 30d | 2026-07-29 A | 2026-09-11 |  | 50% | 15d | 2026-07-27 | 2026-09-09 | 30d | -2d | 0d |  | 566.88h | 312.13h | 572.5 | 495.72 | 320.58 |  |  |
| 39 | 5.1.1 | Iteration 1 Planning |  | 1d | 2026-07-29 A | 2026-07-29 A | 29, 31 | 100% |  | 2026-07-27 | 2026-07-27 | 1d |  |  | Kubo Tetsuya [50%]; Ogawa Daichi; Miyata Ken [30%] | 14.4h | 14.4h | 17.84 | 17.84 | 17.84 | Project Management |  |
| 40 | 5.1.2 | Detailed Design - Account and Contact Management |  | 6d | 2026-07-30 A | 2026-08-06 A | 39 | 100% |  | 2026-07-28 | 2026-08-04 | 6d |  |  | Ogawa Daichi [50%]; Nishimura Kaito; Sakai Rina [30%] | 86.4h | 86.4h | 93.12 | 93.12 | 93.12 | Development | Detailed Design Specification |
| 41 | 5.1.3 | Implementation - Account and Contact Management |  | 18.2d | 2026-08-07 A | 2026-09-07 | 40 | 60% | 7.28d | 2026-08-05 | 2026-08-27 | 14d | -2d | 0d | Nishimura Kaito; Hayashi Miu; Kawano Sara [30%] | 334.88h | 200.93h | 332.7 | 255.92 | 199.62 | Development |  |
| 42 | 5.1.4 | Unit Test - Account and Contact Management |  | 5d | 2026-08-26 A | 2026-09-01 | 41SS+10d | 20% | 4d | 2026-08-24 | 2026-08-28 | 5d | -2d | 0d | Hayashi Miu [80%]; Morita Kenta [50%] | 52h | 10.4h | 50 | 50 | 10 | Quality Assurance |  |
| 43 | 5.1.5 | Code Review and Refactoring - Account and Contact Management |  | 2d | 2026-09-02 | 2026-09-03 | 42 |  |  | 2026-08-31 | 2026-09-01 | 2d | -2d | 0d | Ogawa Daichi [60%]; Nishimura Kaito [40%] | 16h |  | 18.4 | 18.4 |  | Development |  |
| 44 | 5.1.6 | Feature Test - Account and Contact Management |  | 4d | 2026-09-04 | 2026-09-09 | 43 |  |  | 2026-09-02 | 2026-09-07 | 4d | -2d | 0d | Morita Kenta [80%]; Tanabe Yuka [50%] | 41.6h |  | 36.64 | 36.64 |  | Quality Assurance |  |
| 45 | 5.1.7 | Iteration 1 Review and Demo |  | 1d | 2026-09-10 | 2026-09-10 | 44 |  |  | 2026-09-08 | 2026-09-08 | 1d | -2d | 0d | Kubo Tetsuya [50%]; Ogawa Daichi [50%]; Sales Department Key Users [50%]; Miyata Ken [30%] | 14.4h |  | 15.64 | 15.64 |  | Project Management |  |
| 46 | 5.1.8 | Iteration 1 Retrospective |  | 1d | 2026-09-11 | 2026-09-11 | 45 |  |  | 2026-09-09 | 2026-09-09 | 1d | 205d |  | Kubo Tetsuya [30%]; Ogawa Daichi [30%]; Hara Aya [30%] | 7.2h |  | 8.16 | 8.16 |  | Project Management |  |
| 47 | 5.2 | **Iteration 2 - Opportunity and Pipeline Management** |  | 30d | 2026-09-11 | 2026-10-27 |  |  |  | 2026-09-09 | 2026-10-23 | 30d | -2d | 0d |  | 541.12h |  | 538.58 | 488.52 |  |  |  |
| 48 | 5.2.1 | Iteration 2 Planning |  | 1d | 2026-09-11 | 2026-09-11 | 45 |  |  | 2026-09-09 | 2026-09-09 | 1d | -2d | 0d | Kubo Tetsuya [50%]; Ogawa Daichi; Miyata Ken [30%] | 14.4h |  | 17.84 | 17.84 |  | Project Management |  |
| 49 | 5.2.2 | Detailed Design - Opportunity and Pipeline Management |  | 6d | 2026-09-14 | 2026-09-22 | 48 |  |  | 2026-09-10 | 2026-09-17 | 6d | -2d | 0d | Ogawa Daichi [50%]; Hayashi Miu; Sakai Rina [30%] | 86.4h |  | 93.12 | 93.12 |  | Development | Detailed Design Specification |
| 50 | 5.2.3 | Implementation - Opportunity and Pipeline Management |  | 16.8d | 2026-09-24 | 2026-10-19 | 49 |  |  | 2026-09-18 | 2026-10-09 | 14d | -2d | 0d | Hayashi Miu; Kondo Sora; Kawano Sara [30%] | 309.12h |  | 300.38 | 250.32 |  | Development |  |
| 51 | 5.2.4 | Unit Test - Opportunity and Pipeline Management |  | 5d | 2026-10-08 | 2026-10-15 | 50SS+10d |  |  | 2026-10-06 | 2026-10-13 | 5d | -2d | 0d | Kondo Sora [80%]; Morita Kenta [50%] | 52h |  | 48.4 | 48.4 |  | Quality Assurance |  |
| 52 | 5.2.5 | Code Review and Refactoring - Opportunity and Pipeline Management |  | 2d | 2026-10-16 | 2026-10-19 | 51 |  |  | 2026-10-14 | 2026-10-15 | 2d | -2d | 0d | Ogawa Daichi [60%]; Hayashi Miu [40%] | 16h |  | 18.4 | 18.4 |  | Development |  |
| 53 | 5.2.6 | Feature Test - Opportunity and Pipeline Management |  | 4d | 2026-10-20 | 2026-10-23 | 52 |  |  | 2026-10-16 | 2026-10-21 | 4d | -2d | 0d | Morita Kenta [80%]; Tanabe Yuka [50%] | 41.6h |  | 36.64 | 36.64 |  | Quality Assurance |  |
| 54 | 5.2.7 | Iteration 2 Review and Demo |  | 1d | 2026-10-26 | 2026-10-26 | 53 |  |  | 2026-10-22 | 2026-10-22 | 1d | -2d | 0d | Kubo Tetsuya [50%]; Ogawa Daichi [50%]; Sales Department Key Users [50%]; Miyata Ken [30%] | 14.4h |  | 15.64 | 15.64 |  | Project Management |  |
| 55 | 5.2.8 | Iteration 2 Retrospective |  | 1d | 2026-10-27 | 2026-10-27 | 54 |  |  | 2026-10-23 | 2026-10-23 | 1d | 176d |  | Kubo Tetsuya [30%]; Ogawa Daichi [30%]; Hara Aya [30%] | 7.2h |  | 8.16 | 8.16 |  | Project Management |  |

| ID | WBS | Task | Type | Duration | Start | Finish | Predecessors | Baseline start | Baseline finish | Baseline duration | Total slack | Free slack | Resources | Work | Cost | Baseline cost | Team | Deliverable |
| --- | --- | --- | --- | --- | --- | --- | --- | --- | --- | --- | --- | --- | --- | --- | --- | --- | --- | --- |
| 56 | 5.3 | **Iteration 3 - Activity and Schedule Management** |  | 26d | 2026-10-27 | 2026-12-03 |  | 2026-10-23 | 2026-12-01 | 26d | -2d | 0d |  | 428h | 420.44 | 420.44 |  |  |
| 57 | 5.3.1 | Iteration 3 Planning |  | 1d | 2026-10-27 | 2026-10-27 | 54 | 2026-10-23 | 2026-10-23 | 1d | -2d | 0d | Kubo Tetsuya [50%]; Ogawa Daichi; Miyata Ken [30%] | 14.4h | 17.84 | 17.84 | Project Management |  |
| 58 | 5.3.2 | Detailed Design - Activity and Schedule Management |  | 5d | 2026-10-28 | 2026-11-04 | 57 | 2026-10-26 | 2026-10-30 | 5d | -2d | 0d | Ogawa Daichi [50%]; Kondo Sora; Sakai Rina [30%] | 72h | 75.6 | 75.6 | Development | Detailed Design Specification |
| 59 | 5.3.3 | Implementation - Activity and Schedule Management |  | 12d | 2026-11-05 | 2026-11-20 | 58 | 2026-11-02 | 2026-11-18 | 12d | -2d | 0d | Kondo Sora; Maeda Jun; Kawano Sara [30%] | 220.8h | 209.76 | 209.76 | Development |  |
| 60 | 5.3.4 | Unit Test - Activity and Schedule Management |  | 4d | 2026-11-17 | 2026-11-20 | 59SS+8d | 2026-11-13 | 2026-11-18 | 4d | -2d | 0d | Maeda Jun [80%]; Morita Kenta [50%] | 41.6h | 38.72 | 38.72 | Quality Assurance |  |
| 61 | 5.3.5 | Code Review and Refactoring - Activity and Schedule Management |  | 2d | 2026-11-24 | 2026-11-25 | 60 | 2026-11-19 | 2026-11-20 | 2d | -2d | 0d | Ogawa Daichi [60%]; Kondo Sora [40%] | 16h | 18.08 | 18.08 | Development |  |
| 62 | 5.3.6 | Feature Test - Activity and Schedule Management |  | 4d | 2026-11-26 | 2026-12-01 | 61 | 2026-11-24 | 2026-11-27 | 4d | -2d | 0d | Morita Kenta [80%]; Tanabe Yuka [50%] | 41.6h | 36.64 | 36.64 | Quality Assurance |  |
| 63 | 5.3.7 | Iteration 3 Review and Demo |  | 1d | 2026-12-02 | 2026-12-02 | 62 | 2026-11-30 | 2026-11-30 | 1d | -2d | 0d | Kubo Tetsuya [50%]; Ogawa Daichi [50%]; Sales Department Key Users [50%]; Miyata Ken [30%] | 14.4h | 15.64 | 15.64 | Project Management |  |
| 64 | 5.3.8 | Iteration 3 Retrospective |  | 1d | 2026-12-03 | 2026-12-03 | 63 | 2026-12-01 | 2026-12-01 | 1d | 151d |  | Kubo Tetsuya [30%]; Ogawa Daichi [30%]; Hara Aya [30%] | 7.2h | 8.16 | 8.16 | Project Management |  |
| 65 | 5.4 | **Iteration 4 - Quotation and Approval Workflow** |  | 34d | 2026-12-03 | 2027-01-26 |  | 2026-12-01 | 2027-01-22 | 34d | -2d | 0d |  | 551.2h | 549.48 | 549.48 |  |  |
| 66 | 5.4.1 | Iteration 4 Planning |  | 1d | 2026-12-03 | 2026-12-03 | 63 | 2026-12-01 | 2026-12-01 | 1d | -2d | 0d | Kubo Tetsuya [50%]; Ogawa Daichi; Miyata Ken [30%] | 14.4h | 17.84 | 17.84 | Project Management |  |
| 67 | 5.4.2 | Detailed Design - Quotation and Approval Workflow |  | 7d | 2026-12-04 | 2026-12-14 | 66 | 2026-12-02 | 2026-12-10 | 7d | -2d | 0d | Ogawa Daichi [50%]; Nishimura Kaito; Sakai Rina [30%] | 100.8h | 108.64 | 108.64 | Development | Detailed Design Specification |
| 68 | 5.4.3 | Implementation - Quotation and Approval Workflow |  | 16d | 2026-12-15 | 2027-01-12 | 67 | 2026-12-11 | 2027-01-07 | 16d | -2d | 0d | Nishimura Kaito; Maeda Jun; Kawano Sara [30%] | 294.4h | 286.08 | 286.08 | Development |  |
| 69 | 5.4.4 | Unit Test - Quotation and Approval Workflow |  | 6d | 2027-01-06 | 2027-01-14 | 68SS+12d | 2027-01-04 | 2027-01-12 | 6d | -2d | 0d | Maeda Jun [80%]; Morita Kenta [50%] | 62.4h | 58.08 | 58.08 | Quality Assurance |  |
| 70 | 5.4.5 | Code Review and Refactoring - Quotation and Approval Workflow |  | 2d | 2027-01-15 | 2027-01-18 | 69 | 2027-01-13 | 2027-01-14 | 2d | -2d | 0d | Ogawa Daichi [60%]; Nishimura Kaito [40%] | 16h | 18.4 | 18.4 | Development |  |
| 71 | 5.4.6 | Feature Test - Quotation and Approval Workflow |  | 4d | 2027-01-19 | 2027-01-22 | 70 | 2027-01-15 | 2027-01-20 | 4d | -2d | 0d | Morita Kenta [80%]; Tanabe Yuka [50%] | 41.6h | 36.64 | 36.64 | Quality Assurance |  |
| 72 | 5.4.7 | Iteration 4 Review and Demo |  | 1d | 2027-01-25 | 2027-01-25 | 71 | 2027-01-21 | 2027-01-21 | 1d | -2d | 0d | Kubo Tetsuya [50%]; Ogawa Daichi [50%]; Sales Department Key Users [50%]; Miyata Ken [30%] | 14.4h | 15.64 | 15.64 | Project Management |  |
| 73 | 5.4.8 | Iteration 4 Retrospective |  | 1d | 2027-01-26 | 2027-01-26 | 72 | 2027-01-22 | 2027-01-22 | 1d | 118d |  | Kubo Tetsuya [30%]; Ogawa Daichi [30%]; Hara Aya [30%] | 7.2h | 8.16 | 8.16 | Project Management |  |
| 74 | 5.5 | **Iteration 5 - Dashboard and Reporting** |  | 26d | 2027-01-26 | 2027-03-04 |  | 2027-01-22 | 2027-03-02 | 26d | -2d | 0d |  | 428h | 413.32 | 413.32 |  |  |
| 75 | 5.5.1 | Iteration 5 Planning |  | 1d | 2027-01-26 | 2027-01-26 | 72 | 2027-01-22 | 2027-01-22 | 1d | -2d | 0d | Kubo Tetsuya [50%]; Ogawa Daichi; Miyata Ken [30%] | 14.4h | 17.84 | 17.84 | Project Management |  |
| 76 | 5.5.2 | Detailed Design - Dashboard and Reporting |  | 5d | 2027-01-27 | 2027-02-02 | 75 | 2027-01-25 | 2027-01-29 | 5d | -2d | 0d | Ogawa Daichi [50%]; Yasuda Rei; Sakai Rina [30%] | 72h | 73.6 | 73.6 | Development | Detailed Design Specification |
| 77 | 5.5.3 | Implementation - Dashboard and Reporting |  | 12d | 2027-02-03 | 2027-02-19 | 76 | 2027-02-01 | 2027-02-17 | 12d | -2d | 0d | Yasuda Rei; Kondo Sora; Kawano Sara [30%] | 220.8h | 204.96 | 204.96 | Development |  |
| 78 | 5.5.4 | Unit Test - Dashboard and Reporting |  | 4d | 2027-02-16 | 2027-02-19 | 77SS+8d | 2027-02-12 | 2027-02-17 | 4d | -2d | 0d | Kondo Sora [80%]; Morita Kenta [50%] | 41.6h | 38.72 | 38.72 | Quality Assurance |  |
| 79 | 5.5.5 | Code Review and Refactoring - Dashboard and Reporting |  | 2d | 2027-02-22 | 2027-02-24 | 78 | 2027-02-18 | 2027-02-19 | 2d | -2d | 0d | Ogawa Daichi [60%]; Yasuda Rei [40%] | 16h | 17.76 | 17.76 | Development |  |
| 80 | 5.5.6 | Feature Test - Dashboard and Reporting |  | 4d | 2027-02-25 | 2027-03-02 | 79 | 2027-02-22 | 2027-02-26 | 4d | -2d | 0d | Morita Kenta [80%]; Tanabe Yuka [50%] | 41.6h | 36.64 | 36.64 | Quality Assurance |  |
| 81 | 5.5.7 | Iteration 5 Review and Demo |  | 1d | 2027-03-03 | 2027-03-03 | 80 | 2027-03-01 | 2027-03-01 | 1d | -2d | 0d | Kubo Tetsuya [50%]; Ogawa Daichi [50%]; Sales Department Key Users [50%]; Miyata Ken [30%] | 14.4h | 15.64 | 15.64 | Project Management |  |
| 82 | 5.5.8 | Iteration 5 Retrospective |  | 1d | 2027-03-04 | 2027-03-04 | 81 | 2027-03-02 | 2027-03-02 | 1d | -2d | 0d | Kubo Tetsuya [30%]; Ogawa Daichi [30%]; Hara Aya [30%] | 7.2h | 8.16 | 8.16 | Project Management |  |
| 83 | 5.6 | All Iterations Complete | milestone | 0d | 2027-03-04 | 2027-03-04 | 82 | 2027-03-02 | 2027-03-02 | 0d | -2d | 0d |  |  |  |  | Development |  |

| ID | WBS | Task | Type | Duration | Start | Finish | Predecessors | Complete | Remaining | Baseline start | Baseline finish | Baseline duration | Total slack | Free slack | Resources | Work | Actual work | Cost | Baseline cost | Actual cost | Team |
| --- | --- | --- | --- | --- | --- | --- | --- | --- | --- | --- | --- | --- | --- | --- | --- | --- | --- | --- | --- | --- | --- |
| 84 | 6 | **Data Migration** |  | 201d | 2026-06-08 A | 2027-04-07 |  | 66% | 68.34d | 2026-06-08 | 2027-04-05 | 199d | 8d | 0d |  | 842.2h | 538.27h | 820.67 | 767.12 | 528.89 |  |
| 85 | 6.1 | Source Data Survey |  | 8d | 2026-06-08 A | 2026-06-17 A | 16 | 100% |  | 2026-06-08 | 2026-06-17 | 8d |  |  | Shimizu Aoi; Sakai Rina [30%] | 83.2h | 83.2h | 93.76 | 93.76 | 93.76 | Data Engineering |
| 86 | 6.2 | Data Mapping Definition |  | 10d | 2026-07-21 A | 2026-08-03 A | 85, 25 | 100% |  | 2026-07-16 | 2026-07-30 | 10d |  |  | Shimizu Aoi; Yasuda Rei [50%] | 120h | 120h | 128 | 128 | 128 | Data Engineering |
| 87 | 6.3 | Migration Tool Development |  | 15d | 2026-08-04 A | 2026-08-27 | 86 | 93% | 1.05d | 2026-07-31 | 2026-08-25 | 15d | 133d | 5.25d | Yasuda Rei; Shimizu Aoi [50%] | 180h | 167.4h | 177 | 177 | 164.61 | Data Engineering |
| 88 | 6.4 | Data Cleansing Rules and Execution |  | 20.25d | 2026-08-04 A | 2026-09-04 | 86 | 69% | 6.28d | 2026-07-31 | 2026-08-25 | 15d | 127.75d | 0d | Shimizu Aoi [50%]; Sales Department Key Users | 243h | 167.67h | 206.55 | 153 | 142.52 | Data Engineering |
| 89 | 6.5 | Mock Migration 1 |  | 5d | 2026-09-04 | 2026-09-11 | 87, 88 |  |  | 2026-08-26 | 2026-09-01 | 5d | 127.75d | 119.75d | Shimizu Aoi; Yasuda Rei [50%] | 60h |  | 64 | 64 |  | Data Engineering |
| 90 | 6.6 | Mock Migration 2 |  | 5d | 2027-03-24 | 2027-03-30 | 89FS+5d, 96 |  |  | 2027-03-19 | 2027-03-26 | 5d | 8d | 0d | Shimizu Aoi; Yasuda Rei [50%] | 60h |  | 64 | 64 |  | Data Engineering |
| 91 | 6.7 | Migration Result Verification |  | 6d | 2027-03-31 | 2027-04-07 | 90 |  |  | 2027-03-29 | 2027-04-05 | 6d | 8d | 0d | Shimizu Aoi [80%]; Sales Department Key Users [80%]; Tanabe Yuka [40%] | 96h |  | 87.36 | 87.36 |  | Data Engineering |
| 92 | 6.8 | Migration Procedure Fixed | milestone | 0d | 2027-04-07 | 2027-04-07 | 91 |  |  | 2027-04-05 | 2027-04-05 | 0d | 8d | 10d |  |  |  |  |  |  | Data Engineering |
| 93 | 7 | **System Integration Test** |  | 176d | 2026-07-28 A | 2027-04-21 |  | 28% | 126.72d | 2026-07-24 | 2027-04-19 | 176d | -2d | 0d |  | 1160.8h | 319.83h | 1,073.92 | 1,073.92 | 293.77 |  |
| 94 | 7.1 | SIT Plan |  | 5d | 2026-07-28 A | 2026-08-03 A | 29 | 100% |  | 2026-07-24 | 2026-07-30 | 5d |  |  | Morita Kenta; Kubo Tetsuya [30%] | 52h | 52h | 51.6 | 51.6 | 51.6 | Quality Assurance |
| 95 | 7.2 | SIT Case Creation |  | 15d | 2026-08-04 A | 2026-08-27 | 94 | 93% | 1.05d | 2026-07-31 | 2026-08-25 | 15d | 121d | 123d | Morita Kenta; Tanabe Yuka; Sakai Rina [40%] | 288h | 267.83h | 260.4 | 260.4 | 242.17 | Quality Assurance |
| 96 | 7.3 | SIT Cycle 1 |  | 12d | 2027-03-05 | 2027-03-23 | 83, 95, 33 |  |  | 2027-03-03 | 2027-03-18 | 12d | -2d | 0d | Morita Kenta; Tanabe Yuka; Nishimura Kaito [40%] | 230.4h |  | 206.4 | 206.4 |  | Quality Assurance |
| 97 | 7.4 | Defect Fixing (Cycle 1) |  | 10d | 2027-03-11 | 2027-03-25 | 96SS+4d |  |  | 2027-03-09 | 2027-03-23 | 10d | -2d | 0d | Nishimura Kaito; Hayashi Miu; Kondo Sora [60%] | 208h |  | 205.6 | 205.6 |  | Development |
| 98 | 7.5 | SIT Cycle 2 |  | 10d | 2027-03-26 | 2027-04-08 | 96, 97 |  |  | 2027-03-24 | 2027-04-06 | 10d | -2d | 0d | Morita Kenta; Tanabe Yuka | 160h |  | 140 | 140 |  | Quality Assurance |
| 99 | 7.6 | Defect Fixing (Cycle 2) |  | 8d | 2027-03-31 | 2027-04-09 | 98SS+3d |  |  | 2027-03-29 | 2027-04-07 | 8d | -2d | 0d | Hayashi Miu; Maeda Jun [80%] | 115.2h |  | 112.64 | 112.64 |  | Development |
| 100 | 7.7 | Regression Test |  | 6d | 2027-04-12 | 2027-04-19 | 98, 99 |  |  | 2027-04-08 | 2027-04-15 | 6d | -2d | 0d | Morita Kenta [80%]; Tanabe Yuka | 86.4h |  | 75.36 | 75.36 |  | Quality Assurance |
| 101 | 7.8 | SIT Exit Review |  | 2d | 2027-04-20 | 2027-04-21 | 100 |  |  | 2027-04-16 | 2027-04-19 | 2d | -2d | 0d | Kubo Tetsuya [50%]; Morita Kenta [80%] | 20.8h |  | 21.92 | 21.92 |  | Quality Assurance |
| 102 | 7.9 | SIT Complete | milestone | 0d | 2027-04-21 | 2027-04-21 | 101 |  |  | 2027-04-19 | 2027-04-19 | 0d | -2d | 0d |  |  |  |  |  |  | Quality Assurance |
| 103 | 8 | **Performance and Security Test** |  | 35d | 2027-03-24 | 2027-05-17 |  |  |  | 2027-03-19 | 2027-05-13 | 35d | 46d | 0d |  | 323.2h |  | 373.16 | 373.16 |  |  |
| 104 | 8.1 | Performance Test Scenario Design |  | 5d | 2027-03-24 | 2027-03-30 | 96 |  |  | 2027-03-19 | 2027-03-26 | 5d | 62d | 16d | Ueda Shinji [50%]; Tanabe Yuka [50%] | 40h |  | 45 | 45 |  | Quality Assurance |
| 105 | 8.2 | Load Test Execution |  | 6d | 2027-04-22 | 2027-04-30 | 104, 102 |  |  | 2027-04-20 | 2027-04-27 | 6d | 46d | 0d | Iwasaki Go [60%]; Tanabe Yuka [80%]; Ueda Shinji [30%] | 81.6h |  | 87.36 | 87.36 |  | Quality Assurance |
| 106 | 8.3 | Performance Tuning |  | 8d | 2027-05-06 | 2027-05-17 | 105 |  |  | 2027-04-28 | 2027-05-13 | 8d | 46d | 0d | Ueda Shinji [50%]; Shimizu Aoi [50%]; Nishimura Kaito [50%] | 96h |  | 113.6 | 113.6 |  | Development |
| 107 | 8.4 | Vulnerability Assessment |  | 6d | 2027-04-22 | 2027-04-30 | 102 |  |  | 2027-04-20 | 2027-04-27 | 6d | 48d | 0d | Tsuji Masaru [40%]; Iwasaki Go [30%] | 33.6h |  | 46.08 | 46.08 |  | Quality Assurance |
| 108 | 8.5 | Security Remediation |  | 6d | 2027-05-06 | 2027-05-13 | 107 |  |  | 2027-04-28 | 2027-05-11 | 6d | 48d | 2d | Maeda Jun [80%]; Iwasaki Go [40%]; Tsuji Masaru [30%] | 72h |  | 81.12 | 81.12 |  | Development |
| 109 | 8.6 | Non-functional Requirements Met | milestone | 0d | 2027-05-17 | 2027-05-17 | 106, 108 |  |  | 2027-05-13 | 2027-05-13 | 0d | 46d |  |  |  |  |  |  |  | Quality Assurance |

Notes:
- 88: Duplicate customer records were far more numerous than estimated in the survey.

| ID | WBS | Task | Type | Duration | Start | Finish | Predecessors | Complete | Remaining | Baseline start | Baseline finish | Baseline duration | Total slack | Free slack | Deadline | Resources | Work | Actual work | Cost | Baseline cost | Actual cost | Team |
| --- | --- | --- | --- | --- | --- | --- | --- | --- | --- | --- | --- | --- | --- | --- | --- | --- | --- | --- | --- | --- | --- | --- |
| 110 | 9 | **User Acceptance Test** |  | 196d | 2026-08-04 A | 2027-06-01 |  | 11% | 174.44d | 2026-07-31 | 2027-05-28 | 196d | -2d | 0d |  |  | 515.2h | 41.6h | 453.6 | 453.6 | 44.48 |  |
| 111 | 9.1 | UAT Plan |  | 4d | 2026-08-04 A | 2026-08-07 A | 94 | 100% |  | 2026-07-31 | 2026-08-05 | 4d |  |  |  | Kubo Tetsuya [40%]; Miyata Ken [60%]; Sales Department Key Users [30%] | 41.6h | 41.6h | 44.48 | 44.48 | 44.48 | Quality Assurance |
| 112 | 9.2 | UAT Data Preparation |  | 5d | 2027-04-22 | 2027-04-28 | 92, 102 |  |  | 2027-04-20 | 2027-04-26 | 5d | -2d | 0d |  | Shimizu Aoi [60%]; Tanabe Yuka [40%] | 40h |  | 41.2 | 41.2 |  | Data Engineering |
| 113 | 9.3 | UAT Participant Briefing |  | 2d | 2027-04-30 | 2027-05-06 | 111, 112 |  |  | 2027-04-27 | 2027-04-28 | 2d | -2d | 0d |  | Noda Emi [80%]; Miyata Ken [40%]; Sales Department Key Users | 35.2h |  | 28.48 | 28.48 |  | Training |
| 114 | 9.4 | UAT Cycle 1 |  | 10d | 2027-05-07 | 2027-05-20 | 113 |  |  | 2027-04-30 | 2027-05-18 | 10d | -2d | 0d |  | Sales Department Key Users [150%]; Miyata Ken [50%]; Morita Kenta [50%] | 200h |  | 164 | 164 |  | Quality Assurance |
| 115 | 9.5 | UAT Defect Fixing |  | 8d | 2027-05-13 | 2027-05-24 | 114SS+4d |  |  | 2027-05-11 | 2027-05-20 | 8d | -2d | 0d |  | Nishimura Kaito [80%]; Kondo Sora [80%] | 102.4h |  | 99.84 | 99.84 |  | Development |
| 116 | 9.6 | UAT Cycle 2 |  | 6d | 2027-05-25 | 2027-06-01 | 114, 115 |  |  | 2027-05-21 | 2027-05-28 | 6d | -2d | 0d |  | Sales Department Key Users [150%]; Sakai Rina [50%] | 96h |  | 75.6 | 75.6 |  | Quality Assurance |
| 117 | 9.7 | UAT Sign-off | milestone | 0d | 2027-06-01 | 2027-06-01 | 116 |  |  | 2027-05-28 | 2027-05-28 | 0d | -2d | 0d | 2027-05-28 |  |  |  |  |  |  | Quality Assurance |
| 118 | 10 | **Training and Rollout Preparation** |  | 66d | 2027-03-05 | 2027-06-11 |  |  |  | 2027-03-03 | 2027-06-09 | 66d | -2d | 0d |  |  | 376h |  | 310.48 | 310.48 |  |  |
| 119 | 10.1 | End User Manual |  | 12d | 2027-03-05 | 2027-03-23 | 83 |  |  | 2027-03-03 | 2027-03-18 | 12d | 40d | 0d |  | Noda Emi; Sakai Rina [30%] | 124.8h |  | 107.04 | 107.04 |  | Training |
| 120 | 10.2 | Administrator Manual |  | 8d | 2027-03-05 | 2027-03-16 | 83 |  |  | 2027-03-03 | 2027-03-12 | 8d | 51d | 53d |  | Noda Emi [50%]; Iwasaki Go [30%] | 51.2h |  | 48.64 | 48.64 |  | Training |
| 121 | 10.3 | Train the Trainer |  | 4d | 2027-03-24 | 2027-03-29 | 119 |  |  | 2027-03-19 | 2027-03-25 | 4d | 40d | 42d |  | Noda Emi; Sales Department Key Users | 64h |  | 48 | 48 |  | Training |
| 122 | 10.4 | User Training - East Japan |  | 4d | 2027-06-02 | 2027-06-07 | 121, 117 |  |  | 2027-05-31 | 2027-06-03 | 4d | -2d | 0d |  | Noda Emi; Sales Department Key Users [50%] | 48h |  | 36.8 | 36.8 |  | Training |
| 123 | 10.5 | User Training - West Japan |  | 4d | 2027-06-08 | 2027-06-11 | 122 |  |  | 2027-06-04 | 2027-06-09 | 4d | -2d | 0d |  | Noda Emi; Sales Department Key Users [50%] | 48h |  | 36.8 | 36.8 |  | Training |
| 124 | 10.6 | Help Desk Setup |  | 5d | 2027-06-07 | 2027-06-11 | 120, 123FF |  |  | 2027-06-03 | 2027-06-09 | 5d | -2d | 0d |  | Hara Aya [60%]; Noda Emi [40%] | 40h |  | 33.2 | 33.2 |  | Project Management |
| 125 | 10.7 | Training Complete | milestone | 0d | 2027-06-11 | 2027-06-11 | 123, 124 |  |  | 2027-06-09 | 2027-06-09 | 0d | -2d | 0d |  |  |  |  |  |  |  | Training |
| 126 | 11 | **Release and Hypercare** |  | 60d | 2027-04-22 | 2027-07-21 |  |  |  | 2027-04-20 | 2027-07-16 | 60d | -2d | 0d |  |  | 491.2h |  | 544.72 | 544.72 |  |  |
| 127 | 11.1 | Release and Cutover Plan |  | 5d | 2027-04-22 | 2027-04-28 | 102 |  |  | 2027-04-20 | 2027-04-26 | 5d | 23d | 20d |  | Kubo Tetsuya [80%]; Iwasaki Go [50%]; Shimizu Aoi [30%] | 64h |  | 79.4 | 79.4 |  | Project Management |
| 128 | 11.2 | Cutover Rehearsal |  | 3d | 2027-06-02 | 2027-06-04 | 127, 117 |  |  | 2027-05-31 | 2027-06-02 | 3d | 3d | 5d |  | Iwasaki Go; Shimizu Aoi; Ogawa Daichi [50%] | 60h |  | 71.4 | 71.4 |  | Infrastructure |
| 129 | 11.3 | Production Data Migration |  | 3d | 2027-06-14 | 2027-06-16 | 128, 125 |  |  | 2027-06-10 | 2027-06-14 | 3d | -2d | 0d |  | Shimizu Aoi; Yasuda Rei [80%]; Iwasaki Go [50%] | 55.2h |  | 59.28 | 59.28 |  | Data Engineering |
| 130 | 11.4 | Production Release |  | 2d | 2027-06-17 | 2027-06-18 | 129 |  |  | 2027-06-15 | 2027-06-16 | 2d | -2d | 0d |  | Iwasaki Go; Ogawa Daichi; Kubo Tetsuya [50%] | 40h |  | 49.6 | 49.6 |  | Infrastructure |
| 131 | 11.5 | Go-Live | milestone | 0d | 2027-06-18 | 2027-06-18 | 130 |  |  | 2027-06-16 | 2027-06-16 | 0d | -2d | 0d | 2027-06-16 |  |  |  |  |  |  | Project Management |
| 132 | 11.6 | Hypercare Support |  | 15d | 2027-06-21 | 2027-07-09 | 131 |  |  | 2027-06-17 | 2027-07-07 | 15d | 0d |  |  | Ogawa Daichi [50%]; Nishimura Kaito [50%]; Morita Kenta [30%]; Hara Aya [30%] | 192h |  | 198 | 198 |  | Project Management |
| 133 | 11.7 | Post-implementation Review |  | 4d | 2027-07-12 | 2027-07-15 | 132 |  |  | 2027-07-08 | 2027-07-13 | 4d | 0d |  |  | Kubo Tetsuya [60%]; Miyata Ken [40%]; Sales Department Key Users [30%] | 41.6h |  | 45.76 | 45.76 |  | Project Management |
| 134 | 11.8 | Project Closure |  | 3d | 2027-07-16 | 2027-07-21 | 133 |  |  | 2027-07-14 | 2027-07-16 | 3d | 0d |  |  | Kubo Tetsuya [80%]; Hara Aya [80%] | 38.4h |  | 41.28 | 41.28 |  | Project Management |
