# 営業支援(SFA)システム 開発

Schedule from MS Project XML, 2026-04-06 to 2027-07-21, status date 2026-08-26, costs in ￥, A marks actual dates.
社内 Web アプリケーション開発
北川産業株式会社

## Calendars

- 標準: Mon-Fri 08:00-12:00, 13:00-17:00; Sat-Sun off. Exceptions (off unless hours are given): 2026-04-29 (昭和の日), 2026-05-04 (みどりの日), 2026-05-05 (こどもの日), 2026-05-06 (振替休日), 2026-07-20 (海の日), 2026-08-11 (山の日), 2026-08-13 to 2026-08-14 (夏季休暇), 2026-09-21 (敬老の日), 2026-09-23 (秋分の日), 2026-10-12 (スポーツの日), 2026-11-03 (文化の日), 2026-11-23 (勤労感謝の日), 2026-12-29 to 2027-01-03 (年末年始休暇), 2027-01-11 (成人の日), 2027-02-11 (建国記念の日), 2027-02-23 (天皇誕生日), 2027-03-22 (振替休日), 2027-04-29 (昭和の日), 2027-05-03 (憲法記念日), 2027-05-04 (みどりの日), 2027-05-05 (こどもの日), 2027-07-19 (海の日).

## Resources

| Resource | Group | Rate |
| --- | --- | --- |
| 久保 哲也 | プロジェクト管理 | 11000 |
| 原 彩 | プロジェクト管理 | 7000 |
| 宮田 健 | 業務分析 | 9500 |
| 堺 里奈 | 業務分析 | 9000 |
| 上田 慎二 | アーキテクチャ | 12000 |
| 小川 大地 | 開発 | 10500 |
| 西村 海斗 | 開発 | 8500 |
| 林 美羽 | 開発 | 8500 |
| 近藤 空 | 開発 | 8000 |
| 前田 純 | 開発 | 8000 |
| 安田 玲 | 開発 | 7500 |
| 河野 沙羅 | UI デザイン | 8000 |
| 森田 健太 | 品質保証 | 7500 |
| 田辺 由香 | 品質保証 | 7000 |
| 岩崎 剛 | インフラ | 10000 |
| 清水 葵 | データ基盤 | 9500 |
| 辻 勝 | セキュリティ | 13000 |
| 野田 恵美 | 教育 | 6800 |
| 営業部 キーユーザー | 業務部門 | 6000 |
| クラウド利用料 | 外部費用 |  |
| ソフトウェアライセンス費 | 外部費用 |  |

## Schedule

| ID | WBS | Task | Type | Duration | Start | Finish | Predecessors | Complete | Baseline start | Baseline finish | Baseline duration | Deadline | Resources | Work | Actual work | Cost | Baseline cost | Actual cost | 担当チーム | 成果物 |
| --- | --- | --- | --- | --- | --- | --- | --- | --- | --- | --- | --- | --- | --- | --- | --- | --- | --- | --- | --- | --- |
| 1 | 1 | **1. プロジェクト立ち上げ** |  | 11d | 2026-04-06 A | 2026-04-20 A |  | 100% | 2026-04-06 | 2026-04-20 | 11d |  |  | 248h | 248h | 23,680 | 23,680 | 23,680 |  |  |
| 2 | 1.1 | プロジェクト計画書・スコープ定義 |  | 5d | 2026-04-06 A | 2026-04-10 A |  | 100% | 2026-04-06 | 2026-04-10 | 5d |  | 久保 哲也; 原 彩 [50%] | 60h | 60h | 5,800 | 5,800 | 5,800 | プロジェクト管理 | プロジェクト計画書 |
| 3 | 1.2 | 体制構築・要員アサイン |  | 4d | 2026-04-08 A | 2026-04-13 A | 2SS+2d | 100% | 2026-04-08 | 2026-04-13 | 4d |  | 久保 哲也 [50%]; 原 彩 | 48h | 48h | 4,000 | 4,000 | 4,000 | プロジェクト管理 |  |
| 4 | 1.3 | WBS 作成・スケジュール確定 |  | 5d | 2026-04-13 A | 2026-04-17 A | 2 | 100% | 2026-04-13 | 2026-04-17 | 5d |  | 久保 哲也; 原 彩 [50%] | 60h | 60h | 5,800 | 5,800 | 5,800 | プロジェクト管理 |  |
| 5 | 1.4 | 開発標準の策定 |  | 4d | 2026-04-14 A | 2026-04-17 A | 3 | 100% | 2026-04-14 | 2026-04-17 | 4d |  | 上田 慎二 [50%]; 小川 大地 [50%] | 32h | 32h | 3,600 | 3,600 | 3,600 | アーキテクチャ |  |
| 6 | 1.5 | キックオフ会議 |  | 1d | 2026-04-20 A | 2026-04-20 A | 4, 5 | 100% | 2026-04-20 | 2026-04-20 | 1d |  | 久保 哲也; 原 彩; 宮田 健; 上田 慎二; 小川 大地; 営業部 キーユーザー | 48h | 48h | 4,480 | 4,480 | 4,480 | プロジェクト管理 |  |
| 7 | 1.6 | プロジェクト開始承認 | milestone | 0d | 2026-04-20 A | 2026-04-20 A | 6 | 100% | 2026-04-20 | 2026-04-20 | 0d |  |  |  |  |  |  |  | プロジェクト管理 |  |
| 8 | 2 | **2. 要件定義** |  | 43d | 2026-04-21 A | 2026-06-24 A |  | 100% | 2026-04-21 | 2026-06-22 | 41d |  |  | 856h | 856h | 80,528 | 77,424 | 80,528 |  |  |
| 9 | 2.1 | 現行 営業プロセス分析 |  | 10d | 2026-04-21 A | 2026-05-08 A | 7 | 100% | 2026-04-21 | 2026-05-08 | 10d |  | 宮田 健; 堺 里奈 [50%] | 120h | 120h | 11,200 | 11,200 | 11,200 | 業務分析 |  |
| 10 | 2.2 | ヒアリング:直販部門 |  | 4d | 2026-04-24 A | 2026-04-30 A | 9SS+3d | 100% | 2026-04-24 | 2026-04-30 | 4d |  | 宮田 健 [60%]; 営業部 キーユーザー [50%] | 35.2h | 35.2h | 2,784 | 2,784 | 2,784 | 業務分析 |  |
| 11 | 2.3 | ヒアリング:代理店部門 |  | 4d | 2026-05-01 A | 2026-05-11 A | 10 | 100% | 2026-05-01 | 2026-05-11 | 4d |  | 堺 里奈 [60%]; 営業部 キーユーザー [50%] | 35.2h | 35.2h | 2,688 | 2,688 | 2,688 | 業務分析 |  |
| 12 | 2.4 | ヒアリング:営業事務 |  | 3d | 2026-05-12 A | 2026-05-14 A | 11 | 100% | 2026-05-12 | 2026-05-14 | 3d |  | 堺 里奈 [60%]; 営業部 キーユーザー [50%] | 26.4h | 26.4h | 2,016 | 2,016 | 2,016 | 業務分析 |  |
| 13 | 2.5 | To-Be 業務プロセス設計 |  | 10d | 2026-05-15 A | 2026-05-28 A | 12, 9 | 100% | 2026-05-15 | 2026-05-28 | 10d |  | 宮田 健; 堺 里奈; 久保 哲也 [20%] | 176h | 176h | 16,560 | 16,560 | 16,560 | 業務分析 |  |
| 14 | 2.6 | ユースケース・機能要件定義 |  | 12d | 2026-05-29 A | 2026-06-15 A | 13 | 100% | 2026-05-29 | 2026-06-15 | 12d |  | 宮田 健; 堺 里奈 [80%]; 小川 大地 [30%] | 201.6h | 201.6h | 19,056 | 19,056 | 19,056 | 業務分析 |  |
| 15 | 2.7 | 非機能要件定義 |  | 6d | 2026-05-29 A | 2026-06-05 A | 13 | 100% | 2026-05-29 | 2026-06-05 | 6d |  | 上田 慎二 [80%]; 岩崎 剛 [50%]; 辻 勝 [40%] | 81.6h | 81.6h | 9,504 | 9,504 | 9,504 | アーキテクチャ |  |
| 16 | 2.8 | データ要件・移行範囲定義 |  | 6d | 2026-05-29 A | 2026-06-05 A | 13 | 100% | 2026-05-29 | 2026-06-05 | 6d |  | 清水 葵; 堺 里奈 [30%] | 62.4h | 62.4h | 5,856 | 5,856 | 5,856 | データ基盤 |  |
| 17 | 2.9 | 要件定義レビュー・承認 |  | 7d | 2026-06-16 A | 2026-06-24 A | 14, 15, 16 | 100% | 2026-06-16 | 2026-06-22 | 5d |  | 久保 哲也 [80%]; 宮田 健 [80%]; 営業部 キーユーザー [50%] | 117.6h | 117.6h | 10,864 | 7,760 | 10,864 | 業務分析 |  |
| 18 | 2.10 | 要件定義 確定 | milestone | 0d | 2026-06-24 A | 2026-06-24 A | 17 | 100% | 2026-06-22 | 2026-06-22 | 0d | 2026-06-22 |  |  |  |  |  |  | 業務分析 |  |
| 19 | 3 | **3. 方式設計・外部設計** |  | 22d | 2026-06-25 A | 2026-07-27 A |  | 100% | 2026-06-23 | 2026-07-23 | 22d |  |  | 684.8h | 684.8h | 69,080 | 69,080 | 69,080 |  |  |
| 20 | 3.1 | システム方式設計 |  | 10d | 2026-06-25 A | 2026-07-08 A | 18 | 100% | 2026-06-23 | 2026-07-06 | 10d |  | 上田 慎二; 小川 大地 [40%] | 112h | 112h | 12,960 | 12,960 | 12,960 | アーキテクチャ |  |
| 21 | 3.2 | 画面遷移設計 |  | 6d | 2026-06-25 A | 2026-07-02 A | 18 | 100% | 2026-06-23 | 2026-06-30 | 6d |  | 河野 沙羅; 宮田 健 [30%] | 62.4h | 62.4h | 5,208 | 5,208 | 5,208 | アーキテクチャ |  |
| 22 | 3.3 | 画面レイアウト設計 |  | 12d | 2026-07-03 A | 2026-07-21 A | 21 | 100% | 2026-07-01 | 2026-07-16 | 12d |  | 河野 沙羅; 堺 里奈 [30%] | 124.8h | 124.8h | 10,272 | 10,272 | 10,272 | アーキテクチャ |  |
| 23 | 3.4 | API 仕様設計 |  | 8d | 2026-07-09 A | 2026-07-21 A | 20 | 100% | 2026-07-07 | 2026-07-16 | 8d |  | 上田 慎二 [80%]; 小川 大地 [60%] | 89.6h | 89.6h | 10,176 | 10,176 | 10,176 | アーキテクチャ |  |
| 24 | 3.5 | 論理データモデル設計 |  | 8d | 2026-06-30 A | 2026-07-09 A | 20SS+3d | 100% | 2026-06-26 | 2026-07-07 | 8d |  | 清水 葵; 上田 慎二 [30%] | 83.2h | 83.2h | 8,384 | 8,384 | 8,384 | データ基盤 |  |
| 25 | 3.6 | 物理データベース設計 |  | 6d | 2026-07-10 A | 2026-07-17 A | 24 | 100% | 2026-07-08 | 2026-07-15 | 6d |  | 清水 葵 | 48h | 48h | 4,560 | 4,560 | 4,560 | データ基盤 |  |
| 26 | 3.7 | セキュリティ・権限設計 |  | 6d | 2026-07-09 A | 2026-07-16 A | 20 | 100% | 2026-07-07 | 2026-07-14 | 6d |  | 辻 勝 [40%]; 上田 慎二 [40%] | 38.4h | 38.4h | 4,800 | 4,800 | 4,800 | アーキテクチャ |  |
| 27 | 3.8 | インフラ構成設計 |  | 7d | 2026-07-09 A | 2026-07-17 A | 20 | 100% | 2026-07-07 | 2026-07-15 | 7d |  | 岩崎 剛 | 56h | 56h | 5,600 | 5,600 | 5,600 | インフラ |  |
| 28 | 3.9 | 外部設計レビュー |  | 4d | 2026-07-22 A | 2026-07-27 A | 22, 23, 25, 26, 27 | 100% | 2026-07-17 | 2026-07-23 | 4d |  | 久保 哲也 [50%]; 上田 慎二 [80%]; 宮田 健 [50%]; 営業部 キーユーザー [40%] | 70.4h | 70.4h | 7,120 | 7,120 | 7,120 | アーキテクチャ |  |
| 29 | 3.10 | 外部設計 承認 | milestone | 0d | 2026-07-27 A | 2026-07-27 A | 28 | 100% | 2026-07-23 | 2026-07-23 | 0d | 2026-07-23 |  |  |  |  |  |  | アーキテクチャ |  |

Notes:
- 17: レビュー中に見積承認フローの見直しが入り、承認が 1 週間遅延した。

| ID | WBS | Task | Type | Duration | Start | Finish | Predecessors | Complete | Remaining | Baseline start | Baseline finish | Baseline duration | Total slack | Free slack | Resources | Work | Actual work | Cost | Baseline cost | Actual cost | 担当チーム | 成果物 |
| --- | --- | --- | --- | --- | --- | --- | --- | --- | --- | --- | --- | --- | --- | --- | --- | --- | --- | --- | --- | --- | --- | --- |
| 30 | 4 | **4. 環境構築・CI/CD** |  | 29d | 2026-07-21 A | 2026-09-02 |  | 83% | 4.93d | 2026-07-16 | 2026-08-31 | 29d | -2d | 0d |  | 211.2h | 184.32h | 73,716 | 73,716 | 71,028 |  |  |
| 31 | 4.1 | 開発環境構築 |  | 6d | 2026-07-21 A | 2026-07-28 A | 27 | 100% |  | 2026-07-16 | 2026-07-24 | 6d |  |  | 岩崎 剛; クラウド利用料 | 48h | 48h | 18,300 | 18,300 | 18,300 | インフラ |  |
| 32 | 4.2 | CI/CD パイプライン構築 |  | 6d | 2026-07-29 A | 2026-08-05 A | 31 | 100% |  | 2026-07-27 | 2026-08-03 | 6d |  |  | 岩崎 剛 [60%]; 小川 大地 [40%] | 48h | 48h | 4,896 | 4,896 | 4,896 | インフラ |  |
| 33 | 4.3 | 検証環境構築 |  | 5d | 2026-08-06 A | 2026-08-17 A | 32 | 100% |  | 2026-08-04 | 2026-08-10 | 5d |  |  | 岩崎 剛 [80%] | 32h | 32h | 3,200 | 3,200 | 3,200 | インフラ |  |
| 34 | 4.4 | 本番環境構築 |  | 8d | 2026-08-18 A | 2026-08-27 | 33 | 88% | 0.96d | 2026-08-12 | 2026-08-25 | 8d | 212d | 0d | 岩崎 剛; ソフトウェアライセンス費 | 64h | 56.32h | 45,400 | 45,400 | 44,632 | インフラ |  |
| 35 | 4.5 | 監視・ログ基盤設定 |  | 4d | 2026-08-28 | 2026-09-02 | 34 |  |  | 2026-08-26 | 2026-08-31 | 4d | 212d | 0d | 岩崎 剛 [60%] | 19.2h |  | 1,920 | 1,920 |  | インフラ |  |
| 36 | 4.6 | 環境構築完了 | milestone | 0d | 2026-09-02 | 2026-09-02 | 35 |  |  | 2026-08-31 | 2026-08-31 | 0d | 212d |  |  |  |  |  |  |  | インフラ |  |
| 37 | 5 | **5. 反復開発** |  | 142d | 2026-07-29 A | 2027-03-04 |  | 11% | 126.38d | 2026-07-27 | 2027-03-02 | 142d | -2d | 0d |  | 2515.2h | 312.13h | 210,364 | 199,612 | 27,195.84 |  |  |
| 38 | 5.1 | **イテレーション 1 - 取引先・顧客管理** |  | 30d | 2026-07-29 A | 2026-09-11 |  | 50% | 15d | 2026-07-27 | 2026-09-09 | 30d | -2d | 0d |  | 566.88h | 312.13h | 48,474.4 | 41,956 | 27,195.84 |  |  |
| 39 | 5.1.1 | イテレーション 1 計画 |  | 1d | 2026-07-29 A | 2026-07-29 A | 29, 31 | 100% |  | 2026-07-27 | 2026-07-27 | 1d |  |  | 久保 哲也 [50%]; 小川 大地; 宮田 健 [30%] | 14.4h | 14.4h | 1,508 | 1,508 | 1,508 | プロジェクト管理 |  |
| 40 | 5.1.2 | 詳細設計 - 取引先・顧客管理 |  | 6d | 2026-07-30 A | 2026-08-06 A | 39 | 100% |  | 2026-07-28 | 2026-08-04 | 6d |  |  | 小川 大地 [50%]; 西村 海斗; 堺 里奈 [30%] | 86.4h | 86.4h | 7,896 | 7,896 | 7,896 | 開発 | 詳細設計書 |
| 41 | 5.1.3 | 実装 - 取引先・顧客管理 |  | 18.2d | 2026-08-07 A | 2026-09-07 | 40 | 60% | 7.28d | 2026-08-05 | 2026-08-27 | 14d | -2d | 0d | 西村 海斗; 林 美羽; 河野 沙羅 [30%] | 334.88h | 200.93h | 28,246.4 | 21,728 | 16,947.84 | 開発 |  |
| 42 | 5.1.4 | 単体テスト - 取引先・顧客管理 |  | 5d | 2026-08-26 A | 2026-09-01 | 41SS+10d | 20% | 4d | 2026-08-24 | 2026-08-28 | 5d | -2d | 0d | 林 美羽 [80%]; 森田 健太 [50%] | 52h | 10.4h | 4,220 | 4,220 | 844 | 品質保証 |  |
| 43 | 5.1.5 | コードレビュー・改善 - 取引先・顧客管理 |  | 2d | 2026-09-02 | 2026-09-03 | 42 |  |  | 2026-08-31 | 2026-09-01 | 2d | -2d | 0d | 小川 大地 [60%]; 西村 海斗 [40%] | 16h |  | 1,552 | 1,552 |  | 開発 |  |
| 44 | 5.1.6 | 機能テスト - 取引先・顧客管理 |  | 4d | 2026-09-04 | 2026-09-09 | 43 |  |  | 2026-09-02 | 2026-09-07 | 4d | -2d | 0d | 森田 健太 [80%]; 田辺 由香 [50%] | 41.6h |  | 3,040 | 3,040 |  | 品質保証 |  |
| 45 | 5.1.7 | イテレーション 1 レビュー・デモ |  | 1d | 2026-09-10 | 2026-09-10 | 44 |  |  | 2026-09-08 | 2026-09-08 | 1d | -2d | 0d | 久保 哲也 [50%]; 小川 大地 [50%]; 営業部 キーユーザー [50%]; 宮田 健 [30%] | 14.4h |  | 1,328 | 1,328 |  | プロジェクト管理 |  |
| 46 | 5.1.8 | イテレーション 1 振り返り |  | 1d | 2026-09-11 | 2026-09-11 | 45 |  |  | 2026-09-09 | 2026-09-09 | 1d | 205d |  | 久保 哲也 [30%]; 小川 大地 [30%]; 原 彩 [30%] | 7.2h |  | 684 | 684 |  | プロジェクト管理 |  |
| 47 | 5.2 | **イテレーション 2 - 商談・パイプライン管理** |  | 30d | 2026-09-11 | 2026-10-27 |  |  |  | 2026-09-09 | 2026-10-23 | 30d | -2d | 0d |  | 541.12h |  | 45,469.6 | 41,236 |  |  |  |
| 48 | 5.2.1 | イテレーション 2 計画 |  | 1d | 2026-09-11 | 2026-09-11 | 45 |  |  | 2026-09-09 | 2026-09-09 | 1d | -2d | 0d | 久保 哲也 [50%]; 小川 大地; 宮田 健 [30%] | 14.4h |  | 1,508 | 1,508 |  | プロジェクト管理 |  |
| 49 | 5.2.2 | 詳細設計 - 商談・パイプライン管理 |  | 6d | 2026-09-14 | 2026-09-22 | 48 |  |  | 2026-09-10 | 2026-09-17 | 6d | -2d | 0d | 小川 大地 [50%]; 林 美羽; 堺 里奈 [30%] | 86.4h |  | 7,896 | 7,896 |  | 開発 | 詳細設計書 |
| 50 | 5.2.3 | 実装 - 商談・パイプライン管理 |  | 16.8d | 2026-09-24 | 2026-10-19 | 49 |  |  | 2026-09-18 | 2026-10-09 | 14d | -2d | 0d | 林 美羽; 近藤 空; 河野 沙羅 [30%] | 309.12h |  | 25,401.6 | 21,168 |  | 開発 |  |
| 51 | 5.2.4 | 単体テスト - 商談・パイプライン管理 |  | 5d | 2026-10-08 | 2026-10-15 | 50SS+10d |  |  | 2026-10-06 | 2026-10-13 | 5d | -2d | 0d | 近藤 空 [80%]; 森田 健太 [50%] | 52h |  | 4,060 | 4,060 |  | 品質保証 |  |
| 52 | 5.2.5 | コードレビュー・改善 - 商談・パイプライン管理 |  | 2d | 2026-10-16 | 2026-10-19 | 51 |  |  | 2026-10-14 | 2026-10-15 | 2d | -2d | 0d | 小川 大地 [60%]; 林 美羽 [40%] | 16h |  | 1,552 | 1,552 |  | 開発 |  |
| 53 | 5.2.6 | 機能テスト - 商談・パイプライン管理 |  | 4d | 2026-10-20 | 2026-10-23 | 52 |  |  | 2026-10-16 | 2026-10-21 | 4d | -2d | 0d | 森田 健太 [80%]; 田辺 由香 [50%] | 41.6h |  | 3,040 | 3,040 |  | 品質保証 |  |
| 54 | 5.2.7 | イテレーション 2 レビュー・デモ |  | 1d | 2026-10-26 | 2026-10-26 | 53 |  |  | 2026-10-22 | 2026-10-22 | 1d | -2d | 0d | 久保 哲也 [50%]; 小川 大地 [50%]; 営業部 キーユーザー [50%]; 宮田 健 [30%] | 14.4h |  | 1,328 | 1,328 |  | プロジェクト管理 |  |
| 55 | 5.2.8 | イテレーション 2 振り返り |  | 1d | 2026-10-27 | 2026-10-27 | 54 |  |  | 2026-10-23 | 2026-10-23 | 1d | 176d |  | 久保 哲也 [30%]; 小川 大地 [30%]; 原 彩 [30%] | 7.2h |  | 684 | 684 |  | プロジェクト管理 |  |

| ID | WBS | Task | Type | Duration | Start | Finish | Predecessors | Baseline start | Baseline finish | Baseline duration | Total slack | Free slack | Resources | Work | Cost | Baseline cost | 担当チーム | 成果物 |
| --- | --- | --- | --- | --- | --- | --- | --- | --- | --- | --- | --- | --- | --- | --- | --- | --- | --- | --- |
| 56 | 5.3 | **イテレーション 3 - 活動・スケジュール管理** |  | 26d | 2026-10-27 | 2026-12-03 |  | 2026-10-23 | 2026-12-01 | 26d | -2d | 0d |  | 428h | 35,372 | 35,372 |  |  |
| 57 | 5.3.1 | イテレーション 3 計画 |  | 1d | 2026-10-27 | 2026-10-27 | 54 | 2026-10-23 | 2026-10-23 | 1d | -2d | 0d | 久保 哲也 [50%]; 小川 大地; 宮田 健 [30%] | 14.4h | 1,508 | 1,508 | プロジェクト管理 |  |
| 58 | 5.3.2 | 詳細設計 - 活動・スケジュール管理 |  | 5d | 2026-10-28 | 2026-11-04 | 57 | 2026-10-26 | 2026-10-30 | 5d | -2d | 0d | 小川 大地 [50%]; 近藤 空; 堺 里奈 [30%] | 72h | 6,380 | 6,380 | 開発 | 詳細設計書 |
| 59 | 5.3.3 | 実装 - 活動・スケジュール管理 |  | 12d | 2026-11-05 | 2026-11-20 | 58 | 2026-11-02 | 2026-11-18 | 12d | -2d | 0d | 近藤 空; 前田 純; 河野 沙羅 [30%] | 220.8h | 17,664 | 17,664 | 開発 |  |
| 60 | 5.3.4 | 単体テスト - 活動・スケジュール管理 |  | 4d | 2026-11-17 | 2026-11-20 | 59SS+8d | 2026-11-13 | 2026-11-18 | 4d | -2d | 0d | 前田 純 [80%]; 森田 健太 [50%] | 41.6h | 3,248 | 3,248 | 品質保証 |  |
| 61 | 5.3.5 | コードレビュー・改善 - 活動・スケジュール管理 |  | 2d | 2026-11-24 | 2026-11-25 | 60 | 2026-11-19 | 2026-11-20 | 2d | -2d | 0d | 小川 大地 [60%]; 近藤 空 [40%] | 16h | 1,520 | 1,520 | 開発 |  |
| 62 | 5.3.6 | 機能テスト - 活動・スケジュール管理 |  | 4d | 2026-11-26 | 2026-12-01 | 61 | 2026-11-24 | 2026-11-27 | 4d | -2d | 0d | 森田 健太 [80%]; 田辺 由香 [50%] | 41.6h | 3,040 | 3,040 | 品質保証 |  |
| 63 | 5.3.7 | イテレーション 3 レビュー・デモ |  | 1d | 2026-12-02 | 2026-12-02 | 62 | 2026-11-30 | 2026-11-30 | 1d | -2d | 0d | 久保 哲也 [50%]; 小川 大地 [50%]; 営業部 キーユーザー [50%]; 宮田 健 [30%] | 14.4h | 1,328 | 1,328 | プロジェクト管理 |  |
| 64 | 5.3.8 | イテレーション 3 振り返り |  | 1d | 2026-12-03 | 2026-12-03 | 63 | 2026-12-01 | 2026-12-01 | 1d | 151d |  | 久保 哲也 [30%]; 小川 大地 [30%]; 原 彩 [30%] | 7.2h | 684 | 684 | プロジェクト管理 |  |
| 65 | 5.4 | **イテレーション 4 - 見積・承認ワークフロー** |  | 34d | 2026-12-03 | 2027-01-26 |  | 2026-12-01 | 2027-01-22 | 34d | -2d | 0d |  | 551.2h | 46,388 | 46,388 |  |  |
| 66 | 5.4.1 | イテレーション 4 計画 |  | 1d | 2026-12-03 | 2026-12-03 | 63 | 2026-12-01 | 2026-12-01 | 1d | -2d | 0d | 久保 哲也 [50%]; 小川 大地; 宮田 健 [30%] | 14.4h | 1,508 | 1,508 | プロジェクト管理 |  |
| 67 | 5.4.2 | 詳細設計 - 見積・承認ワークフロー |  | 7d | 2026-12-04 | 2026-12-14 | 66 | 2026-12-02 | 2026-12-10 | 7d | -2d | 0d | 小川 大地 [50%]; 西村 海斗; 堺 里奈 [30%] | 100.8h | 9,212 | 9,212 | 開発 | 詳細設計書 |
| 68 | 5.4.3 | 実装 - 見積・承認ワークフロー |  | 16d | 2026-12-15 | 2027-01-12 | 67 | 2026-12-11 | 2027-01-07 | 16d | -2d | 0d | 西村 海斗; 前田 純; 河野 沙羅 [30%] | 294.4h | 24,192 | 24,192 | 開発 |  |
| 69 | 5.4.4 | 単体テスト - 見積・承認ワークフロー |  | 6d | 2027-01-06 | 2027-01-14 | 68SS+12d | 2027-01-04 | 2027-01-12 | 6d | -2d | 0d | 前田 純 [80%]; 森田 健太 [50%] | 62.4h | 4,872 | 4,872 | 品質保証 |  |
| 70 | 5.4.5 | コードレビュー・改善 - 見積・承認ワークフロー |  | 2d | 2027-01-15 | 2027-01-18 | 69 | 2027-01-13 | 2027-01-14 | 2d | -2d | 0d | 小川 大地 [60%]; 西村 海斗 [40%] | 16h | 1,552 | 1,552 | 開発 |  |
| 71 | 5.4.6 | 機能テスト - 見積・承認ワークフロー |  | 4d | 2027-01-19 | 2027-01-22 | 70 | 2027-01-15 | 2027-01-20 | 4d | -2d | 0d | 森田 健太 [80%]; 田辺 由香 [50%] | 41.6h | 3,040 | 3,040 | 品質保証 |  |
| 72 | 5.4.7 | イテレーション 4 レビュー・デモ |  | 1d | 2027-01-25 | 2027-01-25 | 71 | 2027-01-21 | 2027-01-21 | 1d | -2d | 0d | 久保 哲也 [50%]; 小川 大地 [50%]; 営業部 キーユーザー [50%]; 宮田 健 [30%] | 14.4h | 1,328 | 1,328 | プロジェクト管理 |  |
| 73 | 5.4.8 | イテレーション 4 振り返り |  | 1d | 2027-01-26 | 2027-01-26 | 72 | 2027-01-22 | 2027-01-22 | 1d | 118d |  | 久保 哲也 [30%]; 小川 大地 [30%]; 原 彩 [30%] | 7.2h | 684 | 684 | プロジェクト管理 |  |
| 74 | 5.5 | **イテレーション 5 - ダッシュボード・帳票** |  | 26d | 2027-01-26 | 2027-03-04 |  | 2027-01-22 | 2027-03-02 | 26d | -2d | 0d |  | 428h | 34,660 | 34,660 |  |  |
| 75 | 5.5.1 | イテレーション 5 計画 |  | 1d | 2027-01-26 | 2027-01-26 | 72 | 2027-01-22 | 2027-01-22 | 1d | -2d | 0d | 久保 哲也 [50%]; 小川 大地; 宮田 健 [30%] | 14.4h | 1,508 | 1,508 | プロジェクト管理 |  |
| 76 | 5.5.2 | 詳細設計 - ダッシュボード・帳票 |  | 5d | 2027-01-27 | 2027-02-02 | 75 | 2027-01-25 | 2027-01-29 | 5d | -2d | 0d | 小川 大地 [50%]; 安田 玲; 堺 里奈 [30%] | 72h | 6,180 | 6,180 | 開発 | 詳細設計書 |
| 77 | 5.5.3 | 実装 - ダッシュボード・帳票 |  | 12d | 2027-02-03 | 2027-02-19 | 76 | 2027-02-01 | 2027-02-17 | 12d | -2d | 0d | 安田 玲; 近藤 空; 河野 沙羅 [30%] | 220.8h | 17,184 | 17,184 | 開発 |  |
| 78 | 5.5.4 | 単体テスト - ダッシュボード・帳票 |  | 4d | 2027-02-16 | 2027-02-19 | 77SS+8d | 2027-02-12 | 2027-02-17 | 4d | -2d | 0d | 近藤 空 [80%]; 森田 健太 [50%] | 41.6h | 3,248 | 3,248 | 品質保証 |  |
| 79 | 5.5.5 | コードレビュー・改善 - ダッシュボード・帳票 |  | 2d | 2027-02-22 | 2027-02-24 | 78 | 2027-02-18 | 2027-02-19 | 2d | -2d | 0d | 小川 大地 [60%]; 安田 玲 [40%] | 16h | 1,488 | 1,488 | 開発 |  |
| 80 | 5.5.6 | 機能テスト - ダッシュボード・帳票 |  | 4d | 2027-02-25 | 2027-03-02 | 79 | 2027-02-22 | 2027-02-26 | 4d | -2d | 0d | 森田 健太 [80%]; 田辺 由香 [50%] | 41.6h | 3,040 | 3,040 | 品質保証 |  |
| 81 | 5.5.7 | イテレーション 5 レビュー・デモ |  | 1d | 2027-03-03 | 2027-03-03 | 80 | 2027-03-01 | 2027-03-01 | 1d | -2d | 0d | 久保 哲也 [50%]; 小川 大地 [50%]; 営業部 キーユーザー [50%]; 宮田 健 [30%] | 14.4h | 1,328 | 1,328 | プロジェクト管理 |  |
| 82 | 5.5.8 | イテレーション 5 振り返り |  | 1d | 2027-03-04 | 2027-03-04 | 81 | 2027-03-02 | 2027-03-02 | 1d | -2d | 0d | 久保 哲也 [30%]; 小川 大地 [30%]; 原 彩 [30%] | 7.2h | 684 | 684 | プロジェクト管理 |  |
| 83 | 5.6 | 全イテレーション完了 | milestone | 0d | 2027-03-04 | 2027-03-04 | 82 | 2027-03-02 | 2027-03-02 | 0d | -2d | 0d |  |  |  |  | 開発 |  |

| ID | WBS | Task | Type | Duration | Start | Finish | Predecessors | Complete | Remaining | Baseline start | Baseline finish | Baseline duration | Total slack | Free slack | Resources | Work | Actual work | Cost | Baseline cost | Actual cost | 担当チーム |
| --- | --- | --- | --- | --- | --- | --- | --- | --- | --- | --- | --- | --- | --- | --- | --- | --- | --- | --- | --- | --- | --- |
| 84 | 6 | **6. データ移行** |  | 201d | 2026-06-08 A | 2027-04-07 |  | 66% | 68.34d | 2026-06-08 | 2027-04-05 | 199d | 8d | 0d |  | 842.2h | 538.27h | 68,419 | 63,904 | 44,095.35 |  |
| 85 | 6.1 | 移行元データ調査 |  | 8d | 2026-06-08 A | 2026-06-17 A | 16 | 100% |  | 2026-06-08 | 2026-06-17 | 8d |  |  | 清水 葵; 堺 里奈 [30%] | 83.2h | 83.2h | 7,808 | 7,808 | 7,808 | データ基盤 |
| 86 | 6.2 | データマッピング定義 |  | 10d | 2026-07-21 A | 2026-08-03 A | 85, 25 | 100% |  | 2026-07-16 | 2026-07-30 | 10d |  |  | 清水 葵; 安田 玲 [50%] | 120h | 120h | 10,600 | 10,600 | 10,600 | データ基盤 |
| 87 | 6.3 | 移行ツール開発 |  | 15d | 2026-08-04 A | 2026-08-27 | 86 | 93% | 1.05d | 2026-07-31 | 2026-08-25 | 15d | 133d | 5.25d | 安田 玲; 清水 葵 [50%] | 180h | 167.4h | 14,700 | 14,700 | 13,671 | データ基盤 |
| 88 | 6.4 | データクレンジング |  | 20.25d | 2026-08-04 A | 2026-09-04 | 86 | 69% | 6.28d | 2026-07-31 | 2026-08-25 | 15d | 127.75d | 0d | 清水 葵 [50%]; 営業部 キーユーザー | 243h | 167.67h | 17,415 | 12,900 | 12,016.35 | データ基盤 |
| 89 | 6.5 | 移行リハーサル 1 回目 |  | 5d | 2026-09-04 | 2026-09-11 | 87, 88 |  |  | 2026-08-26 | 2026-09-01 | 5d | 127.75d | 119.75d | 清水 葵; 安田 玲 [50%] | 60h |  | 5,300 | 5,300 |  | データ基盤 |
| 90 | 6.6 | 移行リハーサル 2 回目 |  | 5d | 2027-03-24 | 2027-03-30 | 89FS+5d, 96 |  |  | 2027-03-19 | 2027-03-26 | 5d | 8d | 0d | 清水 葵; 安田 玲 [50%] | 60h |  | 5,300 | 5,300 |  | データ基盤 |
| 91 | 6.7 | 移行結果 検証 |  | 6d | 2027-03-31 | 2027-04-07 | 90 |  |  | 2027-03-29 | 2027-04-05 | 6d | 8d | 0d | 清水 葵 [80%]; 営業部 キーユーザー [80%]; 田辺 由香 [40%] | 96h |  | 7,296 | 7,296 |  | データ基盤 |
| 92 | 6.8 | 移行手順 確定 | milestone | 0d | 2027-04-07 | 2027-04-07 | 91 |  |  | 2027-04-05 | 2027-04-05 | 0d | 8d | 10d |  |  |  |  |  |  | データ基盤 |
| 93 | 7 | **7. 結合テスト** |  | 176d | 2026-07-28 A | 2027-04-21 |  | 28% | 126.72d | 2026-07-24 | 2027-04-19 | 176d | -2d | 0d |  | 1160.8h | 319.83h | 89,880 | 89,880 | 24,519.6 |  |
| 94 | 7.1 | 結合テスト計画 |  | 5d | 2026-07-28 A | 2026-08-03 A | 29 | 100% |  | 2026-07-24 | 2026-07-30 | 5d |  |  | 森田 健太; 久保 哲也 [30%] | 52h | 52h | 4,320 | 4,320 | 4,320 | 品質保証 |
| 95 | 7.2 | 結合テストケース作成 |  | 15d | 2026-08-04 A | 2026-08-27 | 94 | 93% | 1.05d | 2026-07-31 | 2026-08-25 | 15d | 121d | 123d | 森田 健太; 田辺 由香; 堺 里奈 [40%] | 288h | 267.83h | 21,720 | 21,720 | 20,199.6 | 品質保証 |
| 96 | 7.3 | 結合テスト 1 巡目 |  | 12d | 2027-03-05 | 2027-03-23 | 83, 95, 33 |  |  | 2027-03-03 | 2027-03-18 | 12d | -2d | 0d | 森田 健太; 田辺 由香; 西村 海斗 [40%] | 230.4h |  | 17,184 | 17,184 |  | 品質保証 |
| 97 | 7.4 | 不具合修正 (1 巡目) |  | 10d | 2027-03-11 | 2027-03-25 | 96SS+4d |  |  | 2027-03-09 | 2027-03-23 | 10d | -2d | 0d | 西村 海斗; 林 美羽; 近藤 空 [60%] | 208h |  | 17,440 | 17,440 |  | 開発 |
| 98 | 7.5 | 結合テスト 2 巡目 |  | 10d | 2027-03-26 | 2027-04-08 | 96, 97 |  |  | 2027-03-24 | 2027-04-06 | 10d | -2d | 0d | 森田 健太; 田辺 由香 | 160h |  | 11,600 | 11,600 |  | 品質保証 |
| 99 | 7.6 | 不具合修正 (2 巡目) |  | 8d | 2027-03-31 | 2027-04-09 | 98SS+3d |  |  | 2027-03-29 | 2027-04-07 | 8d | -2d | 0d | 林 美羽; 前田 純 [80%] | 115.2h |  | 9,536 | 9,536 |  | 開発 |
| 100 | 7.7 | リグレッションテスト |  | 6d | 2027-04-12 | 2027-04-19 | 98, 99 |  |  | 2027-04-08 | 2027-04-15 | 6d | -2d | 0d | 森田 健太 [80%]; 田辺 由香 | 86.4h |  | 6,240 | 6,240 |  | 品質保証 |
| 101 | 7.8 | 結合テスト 完了判定 |  | 2d | 2027-04-20 | 2027-04-21 | 100 |  |  | 2027-04-16 | 2027-04-19 | 2d | -2d | 0d | 久保 哲也 [50%]; 森田 健太 [80%] | 20.8h |  | 1,840 | 1,840 |  | 品質保証 |
| 102 | 7.9 | 結合テスト 完了 | milestone | 0d | 2027-04-21 | 2027-04-21 | 101 |  |  | 2027-04-19 | 2027-04-19 | 0d | -2d | 0d |  |  |  |  |  |  | 品質保証 |
| 103 | 8 | **8. 性能・セキュリティテスト** |  | 35d | 2027-03-24 | 2027-05-17 |  |  |  | 2027-03-19 | 2027-05-13 | 35d | 46d | 0d |  | 323.2h |  | 31,496 | 31,496 |  |  |
| 104 | 8.1 | 性能試験シナリオ設計 |  | 5d | 2027-03-24 | 2027-03-30 | 96 |  |  | 2027-03-19 | 2027-03-26 | 5d | 62d | 16d | 上田 慎二 [50%]; 田辺 由香 [50%] | 40h |  | 3,800 | 3,800 |  | 品質保証 |
| 105 | 8.2 | 負荷テスト実施 |  | 6d | 2027-04-22 | 2027-04-30 | 104, 102 |  |  | 2027-04-20 | 2027-04-27 | 6d | 46d | 0d | 岩崎 剛 [60%]; 田辺 由香 [80%]; 上田 慎二 [30%] | 81.6h |  | 7,296 | 7,296 |  | 品質保証 |
| 106 | 8.3 | 性能チューニング |  | 8d | 2027-05-06 | 2027-05-17 | 105 |  |  | 2027-04-28 | 2027-05-13 | 8d | 46d | 0d | 上田 慎二 [50%]; 清水 葵 [50%]; 西村 海斗 [50%] | 96h |  | 9,600 | 9,600 |  | 開発 |
| 107 | 8.4 | 脆弱性診断 |  | 6d | 2027-04-22 | 2027-04-30 | 102 |  |  | 2027-04-20 | 2027-04-27 | 6d | 48d | 0d | 辻 勝 [40%]; 岩崎 剛 [30%] | 33.6h |  | 3,936 | 3,936 |  | 品質保証 |
| 108 | 8.5 | セキュリティ対応 |  | 6d | 2027-05-06 | 2027-05-13 | 107 |  |  | 2027-04-28 | 2027-05-11 | 6d | 48d | 2d | 前田 純 [80%]; 岩崎 剛 [40%]; 辻 勝 [30%] | 72h |  | 6,864 | 6,864 |  | 開発 |
| 109 | 8.6 | 非機能要件 充足確認 | milestone | 0d | 2027-05-17 | 2027-05-17 | 106, 108 |  |  | 2027-05-13 | 2027-05-13 | 0d | 46d |  |  |  |  |  |  |  | 品質保証 |

Notes:
- 88: 顧客マスタの重複が調査時の想定より大幅に多く、工数が増加した。

| ID | WBS | Task | Type | Duration | Start | Finish | Predecessors | Complete | Remaining | Baseline start | Baseline finish | Baseline duration | Total slack | Free slack | Deadline | Resources | Work | Actual work | Cost | Baseline cost | Actual cost | 担当チーム |
| --- | --- | --- | --- | --- | --- | --- | --- | --- | --- | --- | --- | --- | --- | --- | --- | --- | --- | --- | --- | --- | --- | --- |
| 110 | 9 | **9. 受入テスト(UAT)** |  | 196d | 2026-08-04 A | 2027-06-01 |  | 11% | 174.44d | 2026-07-31 | 2027-05-28 | 196d | -2d | 0d |  |  | 515.2h | 41.6h | 38,574.4 | 38,574.4 | 3,808 |  |
| 111 | 9.1 | UAT 計画 |  | 4d | 2026-08-04 A | 2026-08-07 A | 94 | 100% |  | 2026-07-31 | 2026-08-05 | 4d |  |  |  | 久保 哲也 [40%]; 宮田 健 [60%]; 営業部 キーユーザー [30%] | 41.6h | 41.6h | 3,808 | 3,808 | 3,808 | 品質保証 |
| 112 | 9.2 | UAT データ準備 |  | 5d | 2027-04-22 | 2027-04-28 | 92, 102 |  |  | 2027-04-20 | 2027-04-26 | 5d | -2d | 0d |  | 清水 葵 [60%]; 田辺 由香 [40%] | 40h |  | 3,400 | 3,400 |  | データ基盤 |
| 113 | 9.3 | UAT 参加者 説明会 |  | 2d | 2027-04-30 | 2027-05-06 | 111, 112 |  |  | 2027-04-27 | 2027-04-28 | 2d | -2d | 0d |  | 野田 恵美 [80%]; 宮田 健 [40%]; 営業部 キーユーザー | 35.2h |  | 2,438.4 | 2,438.4 |  | 教育 |
| 114 | 9.4 | UAT 1 巡目 |  | 10d | 2027-05-07 | 2027-05-20 | 113 |  |  | 2027-04-30 | 2027-05-18 | 10d | -2d | 0d |  | 営業部 キーユーザー [150%]; 宮田 健 [50%]; 森田 健太 [50%] | 200h |  | 14,000 | 14,000 |  | 品質保証 |
| 115 | 9.5 | UAT 指摘対応 |  | 8d | 2027-05-13 | 2027-05-24 | 114SS+4d |  |  | 2027-05-11 | 2027-05-20 | 8d | -2d | 0d |  | 西村 海斗 [80%]; 近藤 空 [80%] | 102.4h |  | 8,448 | 8,448 |  | 開発 |
| 116 | 9.6 | UAT 2 巡目 |  | 6d | 2027-05-25 | 2027-06-01 | 114, 115 |  |  | 2027-05-21 | 2027-05-28 | 6d | -2d | 0d |  | 営業部 キーユーザー [150%]; 堺 里奈 [50%] | 96h |  | 6,480 | 6,480 |  | 品質保証 |
| 117 | 9.7 | UAT 承認 | milestone | 0d | 2027-06-01 | 2027-06-01 | 116 |  |  | 2027-05-28 | 2027-05-28 | 0d | -2d | 0d | 2027-05-28 |  |  |  |  |  |  | 品質保証 |
| 118 | 10 | **10. 教育・展開準備** |  | 66d | 2027-03-05 | 2027-06-11 |  |  |  | 2027-03-03 | 2027-06-09 | 66d | -2d | 0d |  |  | 376h |  | 26,352 | 26,352 |  |  |
| 119 | 10.1 | 利用者マニュアル作成 |  | 12d | 2027-03-05 | 2027-03-23 | 83 |  |  | 2027-03-03 | 2027-03-18 | 12d | 40d | 0d |  | 野田 恵美; 堺 里奈 [30%] | 124.8h |  | 9,120 | 9,120 |  | 教育 |
| 120 | 10.2 | 管理者マニュアル作成 |  | 8d | 2027-03-05 | 2027-03-16 | 83 |  |  | 2027-03-03 | 2027-03-12 | 8d | 51d | 53d |  | 野田 恵美 [50%]; 岩崎 剛 [30%] | 51.2h |  | 4,096 | 4,096 |  | 教育 |
| 121 | 10.3 | トレーナー育成 |  | 4d | 2027-03-24 | 2027-03-29 | 119 |  |  | 2027-03-19 | 2027-03-25 | 4d | 40d | 42d |  | 野田 恵美; 営業部 キーユーザー | 64h |  | 4,096 | 4,096 |  | 教育 |
| 122 | 10.4 | 利用者研修 (東日本) |  | 4d | 2027-06-02 | 2027-06-07 | 121, 117 |  |  | 2027-05-31 | 2027-06-03 | 4d | -2d | 0d |  | 野田 恵美; 営業部 キーユーザー [50%] | 48h |  | 3,136 | 3,136 |  | 教育 |
| 123 | 10.5 | 利用者研修 (西日本) |  | 4d | 2027-06-08 | 2027-06-11 | 122 |  |  | 2027-06-04 | 2027-06-09 | 4d | -2d | 0d |  | 野田 恵美; 営業部 キーユーザー [50%] | 48h |  | 3,136 | 3,136 |  | 教育 |
| 124 | 10.6 | ヘルプデスク立ち上げ |  | 5d | 2027-06-07 | 2027-06-11 | 120, 123FF |  |  | 2027-06-03 | 2027-06-09 | 5d | -2d | 0d |  | 原 彩 [60%]; 野田 恵美 [40%] | 40h |  | 2,768 | 2,768 |  | プロジェクト管理 |
| 125 | 10.7 | 教育 完了 | milestone | 0d | 2027-06-11 | 2027-06-11 | 123, 124 |  |  | 2027-06-09 | 2027-06-09 | 0d | -2d | 0d |  |  |  |  |  |  |  | 教育 |
| 126 | 11 | **11. リリース・稼働支援** |  | 60d | 2027-04-22 | 2027-07-21 |  |  |  | 2027-04-20 | 2027-07-16 | 60d | -2d | 0d |  |  | 491.2h |  | 45,660 | 45,660 |  |  |
| 127 | 11.1 | リリース・移行計画 |  | 5d | 2027-04-22 | 2027-04-28 | 102 |  |  | 2027-04-20 | 2027-04-26 | 5d | 23d | 20d |  | 久保 哲也 [80%]; 岩崎 剛 [50%]; 清水 葵 [30%] | 64h |  | 6,660 | 6,660 |  | プロジェクト管理 |
| 128 | 11.2 | 移行リハーサル |  | 3d | 2027-06-02 | 2027-06-04 | 127, 117 |  |  | 2027-05-31 | 2027-06-02 | 3d | 3d | 5d |  | 岩崎 剛; 清水 葵; 小川 大地 [50%] | 60h |  | 5,940 | 5,940 |  | インフラ |
| 129 | 11.3 | 本番データ移行 |  | 3d | 2027-06-14 | 2027-06-16 | 128, 125 |  |  | 2027-06-10 | 2027-06-14 | 3d | -2d | 0d |  | 清水 葵; 安田 玲 [80%]; 岩崎 剛 [50%] | 55.2h |  | 4,920 | 4,920 |  | データ基盤 |
| 130 | 11.4 | 本番リリース |  | 2d | 2027-06-17 | 2027-06-18 | 129 |  |  | 2027-06-15 | 2027-06-16 | 2d | -2d | 0d |  | 岩崎 剛; 小川 大地; 久保 哲也 [50%] | 40h |  | 4,160 | 4,160 |  | インフラ |
| 131 | 11.5 | 本番稼働開始 | milestone | 0d | 2027-06-18 | 2027-06-18 | 130 |  |  | 2027-06-16 | 2027-06-16 | 0d | -2d | 0d | 2027-06-16 |  |  |  |  |  |  | プロジェクト管理 |
| 132 | 11.6 | 稼働直後 サポート(ハイパーケア) |  | 15d | 2027-06-21 | 2027-07-09 | 131 |  |  | 2027-06-17 | 2027-07-07 | 15d | 0d |  |  | 小川 大地 [50%]; 西村 海斗 [50%]; 森田 健太 [30%]; 原 彩 [30%] | 192h |  | 16,620 | 16,620 |  | プロジェクト管理 |
| 133 | 11.7 | 稼働後 評価 |  | 4d | 2027-07-12 | 2027-07-15 | 132 |  |  | 2027-07-08 | 2027-07-13 | 4d | 0d |  |  | 久保 哲也 [60%]; 宮田 健 [40%]; 営業部 キーユーザー [30%] | 41.6h |  | 3,904 | 3,904 |  | プロジェクト管理 |
| 134 | 11.8 | プロジェクト完了 |  | 3d | 2027-07-16 | 2027-07-21 | 133 |  |  | 2027-07-14 | 2027-07-16 | 3d | 0d |  |  | 久保 哲也 [80%]; 原 彩 [80%] | 38.4h |  | 3,456 | 3,456 |  | プロジェクト管理 |
