# Corporate Website Renewal

Schedule from MS Project XML, 2026-06-08 to 2026-11-02, status date 2026-08-26, costs in $, A marks actual dates.
Web site renewal
Aoba Foods Corporation

## Calendars

- Standard: Mon-Fri 08:00-12:00, 13:00-17:00; Sat-Sun off. Exceptions (off unless hours are given): 2026-07-20 (Marine Day), 2026-08-11 (Mountain Day), 2026-08-13 to 2026-08-14 (Summer Company Holiday), 2026-09-21 (Respect for the Aged Day), 2026-09-23 (Autumnal Equinox Day), 2026-10-12 (Sports Day).

## Resources

| Resource | Group | Rate |
| --- | --- | --- |
| Arai Mika | Project Management | 110 |
| Sato Kenji | UX Design | 95 |
| Ono Haruka | Visual Design | 90 |
| Takeda Ryo | Web Development | 100 |
| Nakamura Yui | Web Development | 100 |
| Ishii Nao | Content | 70 |
| Fujita Sho | Quality Assurance | 78 |
| Photo Shoot Vendor | External Cost |  |
| CMS License and Hosting | External Cost |  |

## Schedule

| ID | WBS | Task | Type | Duration | Start | Finish | Predecessors | Complete | Remaining | Baseline start | Baseline finish | Baseline duration | Total slack | Free slack | Deadline | Resources | Work | Actual work | Cost | Baseline cost | Actual cost | Team | Deliverable |
| --- | --- | --- | --- | --- | --- | --- | --- | --- | --- | --- | --- | --- | --- | --- | --- | --- | --- | --- | --- | --- | --- | --- | --- |
| 1 | 1 | **Project Initiation** |  | 13d | 2026-06-08 A | 2026-06-24 A |  | 100% |  | 2026-06-08 | 2026-06-24 | 13d |  |  |  |  | 233.6h | 233.6h | 224.56 | 224.56 | 224.56 |  |  |
| 2 | 1.1 | Kickoff Meeting |  | 1d | 2026-06-08 A | 2026-06-08 A |  | 100% |  | 2026-06-08 | 2026-06-08 | 1d |  |  |  | Arai Mika; Sato Kenji; Ono Haruka; Takeda Ryo; Nakamura Yui; Fujita Sho | 48h | 48h | 45.84 | 45.84 | 45.84 | Project Management |  |
| 3 | 1.2 | Current Site Analysis |  | 5d | 2026-06-09 A | 2026-06-15 A | 2 | 100% |  | 2026-06-09 | 2026-06-15 | 5d |  |  |  | Sato Kenji; Arai Mika [30%] | 52h | 52h | 51.2 | 51.2 | 51.2 | UX Design |  |
| 4 | 1.3 | Competitor Benchmarking |  | 4d | 2026-06-09 A | 2026-06-12 A | 2 | 100% |  | 2026-06-09 | 2026-06-12 | 4d |  |  |  | Sato Kenji [50%]; Ishii Nao [30%] | 25.6h | 25.6h | 21.92 | 21.92 | 21.92 | UX Design |  |
| 5 | 1.4 | Requirements Workshop |  | 3d | 2026-06-16 A | 2026-06-18 A | 3, 4 | 100% |  | 2026-06-16 | 2026-06-18 | 3d |  |  |  | Arai Mika; Sato Kenji; Ishii Nao [50%] | 60h | 60h | 57.6 | 57.6 | 57.6 | Project Management |  |
| 6 | 1.5 | Requirements Definition Document |  | 4d | 2026-06-19 A | 2026-06-24 A | 5 | 100% |  | 2026-06-19 | 2026-06-24 | 4d |  |  |  | Arai Mika [50%]; Sato Kenji | 48h | 48h | 48 | 48 | 48 | Project Management | Requirements Definition Document |
| 7 | 1.6 | Requirements Approved | milestone | 0d | 2026-06-24 A | 2026-06-24 A | 6 | 100% |  | 2026-06-24 | 2026-06-24 | 0d |  |  | 2026-06-24 |  |  |  |  |  |  | Project Management |  |
| 8 | 2 | **Information Architecture and Design** |  | 31d | 2026-06-25 A | 2026-08-07 A |  | 100% |  | 2026-06-25 | 2026-08-05 | 29d |  |  |  |  | 340.8h | 340.8h | 317.68 | 303.28 | 317.68 |  |  |
| 9 | 2.1 | Sitemap and IA Design |  | 5d | 2026-06-25 A | 2026-07-01 A | 7 | 100% |  | 2026-06-25 | 2026-07-01 | 5d |  |  |  | Sato Kenji | 40h | 40h | 38 | 38 | 38 | UX Design |  |
| 10 | 2.2 | Wireframe Creation |  | 8d | 2026-07-02 A | 2026-07-13 A | 9 | 100% |  | 2026-07-02 | 2026-07-13 | 8d |  |  |  | Sato Kenji; Arai Mika [20%] | 76.8h | 76.8h | 74.88 | 74.88 | 74.88 | UX Design |  |
| 11 | 2.3 | Design System and Style Guide |  | 5d | 2026-07-06 A | 2026-07-10 A | 10SS+2d | 100% |  | 2026-07-06 | 2026-07-10 | 5d |  |  |  | Ono Haruka | 40h | 40h | 36 | 36 | 36 | Visual Design |  |
| 12 | 2.4 | Key Page Visual Design |  | 10d | 2026-07-14 A | 2026-07-28 A | 10, 11 | 100% |  | 2026-07-14 | 2026-07-28 | 10d |  |  |  | Ono Haruka; Sato Kenji [30%] | 104h | 104h | 94.8 | 94.8 | 94.8 | Visual Design |  |
| 13 | 2.5 | Design Review with Stakeholders |  | 2d | 2026-07-29 A | 2026-07-30 A | 12 | 100% |  | 2026-07-29 | 2026-07-30 | 2d |  |  |  | Arai Mika [50%]; Sato Kenji [50%]; Ono Haruka | 32h | 32h | 30.8 | 30.8 | 30.8 | Visual Design |  |
| 14 | 2.6 | Design Revision |  | 6d | 2026-07-31 A | 2026-08-07 A | 13 | 100% |  | 2026-07-31 | 2026-08-05 | 4d |  |  |  | Ono Haruka | 48h | 48h | 43.2 | 28.8 | 43.2 | Visual Design |  |
| 15 | 2.7 | Design Approved | milestone | 0d | 2026-08-07 A | 2026-08-07 A | 14 | 100% |  | 2026-08-05 | 2026-08-05 | 0d |  |  | 2026-08-05 |  |  |  |  |  |  | Visual Design |  |
| 16 | 3 | **Content Preparation** |  | 49d | 2026-06-25 A | 2026-09-07 |  | 71% | 14.21d | 2026-06-25 | 2026-08-31 | 44d | -7d | 0d |  |  | 141.6h | 98.63h | 147.12 | 136.08 | 110.66 |  |  |
| 17 | 3.1 | Content Inventory |  | 4d | 2026-06-25 A | 2026-06-30 A | 7 | 100% |  | 2026-06-25 | 2026-06-30 | 4d |  |  |  | Ishii Nao [50%]; Sato Kenji [30%] | 25.6h | 25.6h | 20.32 | 20.32 | 20.32 | Content |  |
| 18 | 3.2 | SEO Keyword Mapping |  | 3d | 2026-07-02 A | 2026-07-06 A | 9 | 100% |  | 2026-07-02 | 2026-07-06 | 3d |  |  |  | Sato Kenji [40%]; Ishii Nao [30%] | 16.8h | 16.8h | 14.16 | 14.16 | 14.16 | UX Design |  |
| 19 | 3.3 | Copywriting |  | 15d | 2026-08-10 A | 2026-09-02 | 17, 15SS | 67% | 4.95d | 2026-08-06 | 2026-08-26 | 12d | -7d | 0d |  | Ishii Nao [50%]; Arai Mika [10%] | 72h | 48.23h | 55.2 | 44.16 | 36.98 | Content |  |
| 20 | 3.4 | Photo Shoot |  | 2d | 2026-08-10 A | 2026-08-12 A | 15 | 100% |  | 2026-08-06 | 2026-08-07 | 2d |  |  |  | Ono Haruka [50%]; Photo Shoot Vendor | 8h | 8h | 39.2 | 39.2 | 39.2 | Content |  |
| 21 | 3.5 | Content Review and Approval |  | 3d | 2026-09-03 | 2026-09-07 | 19 |  |  | 2026-08-27 | 2026-08-31 | 3d | -7d | 0d |  | Arai Mika [50%]; Ishii Nao [30%] | 19.2h |  | 18.24 | 18.24 |  | Content |  |
| 22 | 4 | **Build** |  | 57d | 2026-06-25 A | 2026-09-17 |  | 61% | 22.23d | 2026-06-25 | 2026-09-10 | 52d | -7d | 0d |  |  | 305.6h | 207.72h | 344 | 344 | 255.71 |  |  |
| 23 | 4.1 | CMS Setup and Environment Build |  | 4d | 2026-06-25 A | 2026-06-30 A | 7 | 100% |  | 2026-06-25 | 2026-06-30 | 4d |  |  |  | Nakamura Yui; CMS License and Hosting | 32h | 32h | 80 | 80 | 80 | Web Development |  |
| 24 | 4.2 | Template Development |  | 12d | 2026-08-10 A | 2026-08-28 | 15, 23 | 83% | 2.04d | 2026-08-06 | 2026-08-26 | 12d | -1d | 0d |  | Takeda Ryo; Nakamura Yui [40%] | 134.4h | 111.55h | 134.4 | 134.4 | 111.55 | Web Development |  |
| 25 | 4.3 | Responsive Implementation |  | 6d | 2026-08-21 A | 2026-08-28 | 24SS+6d | 67% | 1.98d | 2026-08-19 | 2026-08-26 | 6d | 7d | 14d |  | Takeda Ryo | 48h | 32.17h | 48 | 48 | 32.16 | Web Development |  |
| 26 | 4.4 | Inquiry Form Implementation |  | 4d | 2026-07-01 A | 2026-07-06 A | 23 | 100% |  | 2026-07-01 | 2026-07-06 | 4d |  |  |  | Nakamura Yui | 32h | 32h | 32 | 32 | 32 | Web Development |  |
| 27 | 4.5 | Content Entry |  | 8d | 2026-09-08 | 2026-09-17 | 24, 21, 20 |  |  | 2026-09-01 | 2026-09-10 | 8d | -7d | 0d |  | Ishii Nao [50%]; Nakamura Yui [30%] | 51.2h |  | 41.6 | 41.6 |  | Content |  |
| 28 | 4.6 | Analytics and Tag Setup |  | 2d | 2026-09-16 | 2026-09-17 | 24, 18, 27FF |  |  | 2026-09-09 | 2026-09-10 | 2d | -7d | 0d |  | Takeda Ryo [50%] | 8h |  | 8 | 8 |  | Web Development |  |
| 29 | 4.7 | Build Complete | milestone | 0d | 2026-09-17 | 2026-09-17 | 25, 26, 27, 28 |  |  | 2026-09-10 | 2026-09-10 | 0d | -7d | 0d |  |  |  |  |  |  |  | Web Development |  |

Notes:
- 6: Scope is limited to the corporate site. The recruitment site is handled by a separate project.
- 14: Two extra review rounds were requested by the marketing department.

| ID | WBS | Task | Type | Duration | Start | Finish | Predecessors | Baseline start | Baseline finish | Baseline duration | Total slack | Free slack | Deadline | Resources | Work | Cost | Baseline cost | Team |
| --- | --- | --- | --- | --- | --- | --- | --- | --- | --- | --- | --- | --- | --- | --- | --- | --- | --- | --- |
| 30 | 5 | **Testing** |  | 17d | 2026-09-18 | 2026-10-15 |  | 2026-09-11 | 2026-10-05 | 15d | -7d | 0d |  |  | 232.8h | 215.9 | 191.9 |  |
| 31 | 5.1 | Functional Testing |  | 5d | 2026-09-18 | 2026-09-28 | 29 | 2026-09-11 | 2026-09-17 | 5d | -7d | 0d |  | Fujita Sho | 40h | 31.2 | 31.2 | Quality Assurance |
| 32 | 5.2 | Cross-browser and Device Testing |  | 4d | 2026-09-18 | 2026-09-25 | 29 | 2026-09-11 | 2026-09-16 | 4d | -6d | 1d |  | Fujita Sho [50%]; Takeda Ryo [30%] | 25.6h | 22.08 | 22.08 | Quality Assurance |
| 33 | 5.3 | Accessibility Check |  | 3d | 2026-09-18 | 2026-09-24 | 29 | 2026-09-11 | 2026-09-15 | 3d | -5d | 2d |  | Sato Kenji [50%]; Fujita Sho [30%] | 19.2h | 17.02 | 17.02 | Quality Assurance |
| 34 | 5.4 | Performance Tuning |  | 3d | 2026-09-29 | 2026-10-01 | 31 | 2026-09-18 | 2026-09-24 | 3d | -3d | 4d |  | Takeda Ryo [60%]; Nakamura Yui [40%] | 24h | 24 | 24 | Web Development |
| 35 | 5.5 | Defect Fixing |  | 7d | 2026-09-29 | 2026-10-07 | 31, 32, 33 | 2026-09-18 | 2026-09-28 | 5d | -7d | 0d |  | Takeda Ryo; Nakamura Yui [50%] | 84h | 84 | 60 | Web Development |
| 36 | 5.6 | User Acceptance Test |  | 5d | 2026-10-08 | 2026-10-15 | 35, 34 | 2026-09-29 | 2026-10-05 | 5d | -7d | 0d |  | Arai Mika [50%]; Fujita Sho [50%] | 40h | 37.6 | 37.6 | Quality Assurance |
| 37 | 5.7 | UAT Sign-off | milestone | 0d | 2026-10-15 | 2026-10-15 | 36 | 2026-10-05 | 2026-10-05 | 0d | -7d | 0d | 2026-10-05 |  |  |  |  | Quality Assurance |
| 38 | 6 | **Launch and Closure** |  | 29d | 2026-09-18 | 2026-11-02 |  | 2026-09-11 | 2026-10-22 | 27d | -7d | 0d |  |  | 95.2h | 95.28 | 95.28 |  |
| 39 | 6.1 | DNS and Production Setup |  | 2d | 2026-09-18 | 2026-09-22 | 29 | 2026-09-11 | 2026-09-14 | 2d | 8d | 15d |  | Nakamura Yui [50%] | 8h | 8 | 8 | Web Development |
| 40 | 6.2 | Go / No-Go Review |  | 1d | 2026-10-16 | 2026-10-16 | 37, 39 | 2026-10-06 | 2026-10-06 | 1d | -7d | 0d |  | Arai Mika; Fujita Sho [50%] | 12h | 11.92 | 11.92 | Project Management |
| 41 | 6.3 | Production Deployment |  | 1d | 2026-10-19 | 2026-10-19 | 40 | 2026-10-07 | 2026-10-07 | 1d | -7d | 0d |  | Nakamura Yui; Takeda Ryo [50%] | 12h | 12 | 12 | Web Development |
| 42 | 6.4 | Site Launch | milestone | 0d | 2026-10-19 | 2026-10-19 | 41 | 2026-10-07 | 2026-10-07 | 0d | -7d | 0d | 2026-10-07 |  |  |  |  | Project Management |
| 43 | 6.5 | Post-launch Monitoring |  | 5d | 2026-10-20 | 2026-10-26 | 42 | 2026-10-08 | 2026-10-15 | 5d | 0d |  |  | Nakamura Yui [40%]; Fujita Sho [30%] | 28h | 25.36 | 25.36 | Web Development |
| 44 | 6.6 | Operations Handover |  | 3d | 2026-10-27 | 2026-10-29 | 43 | 2026-10-16 | 2026-10-20 | 3d | 0d |  |  | Arai Mika [50%]; Nakamura Yui [30%] | 19.2h | 20.4 | 20.4 | Project Management |
| 45 | 6.7 | Project Closure Report |  | 2d | 2026-10-30 | 2026-11-02 | 44 | 2026-10-21 | 2026-10-22 | 2d | 0d |  |  | Arai Mika | 16h | 17.6 | 17.6 | Project Management |
